Schedule from MS Project, 2010-06-07 to 2024-04-01, A marks actual dates.
Microsoft

## Calendars

- 标准: Mon-Fri 08:00-12:00, 13:00-17:00; Sat-Sun off. Exceptions (off unless hours are given): 2023-04-05 (清明节), 2023-04-23 08:00-12:00, 13:00-17:00 (工作日), 2023-05-01 to 2023-05-03 (劳动节), 2023-05-06 08:00-12:00, 13:00-17:00 (工作日), 2023-06-22 to 2023-06-23 (端午节), 2023-06-25 08:00-12:00, 13:00-17:00 (工作日), 2023-09-29 (国庆), 2023-10-02 to 2023-10-06 (国庆), 2023-10-07 to 2023-10-08 08:00-12:00, 13:00-17:00 (工作日), 2024-01-01 to 2024-01-02 (元旦), 2024-02-09 to 2024-02-15 (春节).

## Resources

| Resource |
| --- |
| zhangbinbin |
| gaoliang |
| dingchao |
| huangfeng |
| ford |
| chuangda |
| baidu |
| YF |
| shenhu |
| 三方 |
| wangyunlai |

## Schedule

| ID | WBS | Task | Type | Duration | Start | Finish | Predecessors | Complete | Remaining | Total slack | Free slack | Constraint | Resources | Work | Actual work |
| --- | --- | --- | --- | --- | --- | --- | --- | --- | --- | --- | --- | --- | --- | --- | --- |
| 1 | 1 | UE需求澄清 |  | 48d | 2023-01-25 | 2023-03-31 |  |  |  | 184d | 0d | finish no earlier than 2023-03-31 | zhangbinbin | 384h |  |
| 2 | 2 | **Preparation** |  | 45d | 2023-01-16 A | 2023-03-17 |  | 55% | 20.45d |  |  |  | gaoliang | 536h | 288h |
| 3 | 2.1 | Ford prepare relevant project approal document |  | 6d | 2023-01-27 | 2023-02-03 |  |  |  | 287d |  | finish no earlier than 2023-02-03 | gaoliang | 48h |  |
| 4 | 2.2 | Apple approve PPID |  | 4d | 2023-01-16 | 2023-01-20 |  |  |  | 252.88d | 0.88d | start no earlier than 2023-01-16 | gaoliang | 32h |  |
| 5 | 2.3 | sample ready for software development |  | 12d | 2023-03-01 A | 2023-03-17 A |  | 100% |  |  |  | start no earlier than 2023-03-01 | dingchao | 96h | 96h |
| 6 | 3 | **SW DEV** |  | 201.88d? | 2023-02-07 | 2023-11-24 |  |  |  | 0d |  |  | shenhu | 12310h |  |
| 7 | 3.1 | **驱动适配、Certification** |  | 15d | 2023-03-17 | 2023-04-10 | 5 |  |  |  |  |  | shenhu | 336h |  |
| 8 | 3.1.1 | bonjour框架移植适配 | manual | 3d | 2023-03-17 | 2023-03-22 |  |  |  |  |  |  | shenhu | 24h |  |
| 9 | 3.1.2 | CarPlayResourceManger框架开发 | manual | 14d | 2023-03-20 | 2023-04-10 |  |  |  |  |  |  | shenhu | 112h |  |
| 10 | 3.1.3 | CarPlayApp框架开发 | manual | 7d | 2023-03-27 | 2023-04-06 |  |  |  |  |  |  | shenhu | 56h |  |
| 11 | 3.1.4 | 苹果MFI芯片适配: Hal层到framework层的调试 | manual | 3d | 2023-03-29 | 2023-04-03 |  |  |  |  |  |  | shenhu | 24h |  |
| 12 | 3.2 | IAP2 Stack集成 | manual | 30d | 2023-03-31 | 2023-05-16 | 5FS+10d |  |  |  |  |  | shenhu | 240h |  |
| 13 | 3.3 | **Carplay Plugin集成出图** |  | 40d? | 2023-03-31 | 2023-05-30 | 5FS+10d |  |  |  |  |  | shenhu | 960h |  |
| 14 | 3.3.1 | 协议栈plugin框架开发 | manual | 21d | 2023-03-22 | 2023-04-21 |  |  |  |  |  |  | shenhu | 168h |  |
| 15 | 3.3.2 | carplay主视频流适配 | manual | 12d | 2023-03-29 | 2023-04-17 |  |  |  |  |  |  | shenhu | 96h |  |
| 16 | 3.3.3 | carplay音乐随心听，后排显示 | manual | 17d | 2023-04-20 | 2023-05-15 |  |  |  |  |  |  | shenhu | 136h |  |
| 17 | 3.3.4 | carplay地图第二路视频流适配card业务 讨论 | manual | 5d | 2023-05-05 | 2023-05-10 |  |  |  |  |  |  | baidu; shenhu | 80h |  |
| 18 | 3.3.5 | carplay地图第二路视频流适配card业务 开发 | manual | 9d | 2023-05-10 | 2023-05-22 |  |  |  |  |  |  | shenhu | 72h |  |
| 19 | 3.3.6 | carplay弹窗遮盖第三方交互业务 | manual | 11d | 2023-05-23 | 2023-06-06 |  |  |  |  |  |  | shenhu | 88h |  |
| 20 | 3.4 | **Carplay界面设计/交互设计** |  | 98d | 2023-02-07 | 2023-06-28 |  |  |  | 0d |  |  | shenhu | 2048h |  |
| 21 | 3.4.1 | 定稿的供CarPlay的UI/UE文档 | manual | 39d | 2023-02-07 | 2023-03-31 |  |  |  |  |  |  | ford | 312h |  |
| 22 | 3.4.2 | **Carplay界面设计/交互设计（依赖UI设计图确定)）** |  | 60d | 2023-03-31 | 2023-06-28 | 5FS+10d |  |  |  |  |  | shenhu | 952h |  |
| 23 | 3.4.2.1 | carplay弹窗遮盖第三方交互业务 | manual | 7d | 2023-03-21 | 2023-03-30 |  |  |  |  |  |  | shenhu | 56h |  |
| 24 | 3.4.2.2 | cafplay连接业务 | manual | 7d | 2023-04-11 | 2023-04-20 |  |  |  |  |  |  | shenhu | 56h |  |
| 25 | 3.4.2.3 | carplay重连业务 | manual | 7d | 2023-04-25 | 2023-05-08 |  |  |  |  |  |  | shenhu | 56h |  |
| 26 | 3.4.2.4 | carplay电话仪表显示业务 | manual | 7d | 2023-05-09 | 2023-05-18 |  |  |  |  |  |  | shenhu | 56h |  |
| 27 | 3.4.2.5 | carplay接口业务提供 | manual | 7d | 2023-05-18 | 2023-05-29 |  |  |  |  |  |  | shenhu | 56h |  |
| 28 | 3.4.2.6 | carplay方控按键需求 | manual | 10d | 2023-05-29 | 2023-06-12 |  |  |  |  |  |  | shenhu | 80h |  |
| 29 | 3.4.2.7 | carplay兼容13以下手机 | manual | 14d | 2023-06-07 | 2023-06-28 |  |  |  |  |  |  | shenhu | 112h |  |

Notes:
- 1: 相关需求需要福特UE确认，才能完成最终的需求澄清
- 3: 已完成
- 4: 已完成
- 5: 已完成
- 12: ongoing
- 17: 确认是要定搞的UI，UE
- 21: 3/31之前福特提供定稿的供CarPlay的UI/UE文档
- 25: ongoing

| ID | WBS | Task | Type | Duration | Start | Finish | Predecessors | Total slack | Free slack | Constraint | Resources | Work |
| --- | --- | --- | --- | --- | --- | --- | --- | --- | --- | --- | --- | --- |
| 30 | 3.5 | **Audio** |  | 200.88d? | 2023-02-08 | 2023-11-24 |  | 0d |  |  | shenhu | 5583h |
| 31 | 3.5.1 | 提供carplay所有接口文档 | manual | 1d | 2023-03-01 | 2023-03-02 |  |  |  |  | YF | 8h |
| 32 | 3.5.2 | 延锋提供软件demo版本 | manual | 51d | 2023-02-08 | 2023-04-20 |  |  |  |  | huangfeng | 408h |
| 33 | 3.5.3 | audio arbitration management update | manual | 28d | 2023-03-14 | 2023-04-21 |  |  |  |  | chuangda | 224h |
| 34 | 3.5.4 | Audio data control update | manual | 3d | 2023-04-03 | 2023-04-06 |  |  |  |  | chuangda | 24h |
| 35 | 3.5.5 | Audio对接 | manual | 40d | 2023-04-17 | 2023-06-13 | 7FS+5d |  |  |  | huangfeng | 320h |
| 36 | 3.5.6 | 提供初版的文档版本 | manual | 15d | 2023-03-15 | 2023-04-06 |  |  |  |  | chuangda | 120h |
| 37 | 3.5.7 | 提供最后的文档版本 | manual | 22d? | 2023-03-15 | 2023-04-14 |  |  |  |  | chuangda | 176h |
| 38 | 3.5.8 | carplay音频流适配焦点适配 | manual | 31d | 2023-04-21 | 2023-06-06 |  |  |  |  | 三方 | 248h |
| 39 | 3.5.9 | aduio对接 创达 开发+联调 | manual | 31d | 2023-04-21 | 2023-06-06 |  |  |  |  | 三方 | 248h |
| 40 | 3.5.10 | aduio对接 百度 开发+联调 (需要百度完成开发工作语音指令) | manual | 30d | 2023-04-21 | 2023-06-05 |  |  |  |  | 三方 | 240h |
| 41 | 3.5.11 | 普通siri适配 | manual | 10d | 2023-05-04 | 2023-05-17 |  |  |  |  | shenhu | 80h |
| 42 | 3.5.12 | **enhanced Siri** |  | 187d | 2023-02-28 | 2023-11-24 |  | 0d |  |  |  | 1880h |
| 43 | 3.5.12.1 | enhanced Siri MRD release | manual | 33d | 2023-02-28 | 2023-04-14 |  |  |  |  | baidu | 264h |
| 44 | 3.5.12.2 | carplay SDK interface list review and release | manual | 18d | 2023-03-28 | 2023-04-21 |  |  |  |  | shenhu | 144h |
| 45 | 3.5.12.3 | integrate sdk and modeling | manual | 6d | 2023-03-27 | 2023-04-02 |  |  |  |  | baidu | 48h |
| 46 | 3.5.12.4 | KW and VAD modeling migration | manual | 125d | 2023-05-29 | 2023-11-24 |  |  |  |  | baidu | 1000h |
| 47 | 3.5.12.5 | local navigation & Carplay navigation arbitration | manual | 15d | 2023-04-20 | 2023-05-11 |  |  |  |  | shenhu; baidu | 240h |
| 48 | 3.5.12.6 | enhancesiri适配，互斥交互业务 | manual | 23d | 2023-04-24 | 2023-05-26 |  |  |  |  | shenhu | 184h |
| 49 | 3.6 | **Location** |  | 85d | 2023-03-01 | 2023-07-03 |  | 0d |  |  | shenhu | 1528h |
| 50 | 3.6.1 | 提供Location的提供接口和说明文档 | manual | 37d | 2023-03-01 | 2023-04-21 |  |  |  |  | chuangda | 296h |
| 51 | 3.6.2 | 验证接口和说明文档 | manual | 4d | 2023-04-25 | 2023-04-28 |  |  |  |  | shenhu | 32h |
| 52 | 3.6.3 | location nema格式位置上报 | manual | 17d | 2023-05-04 | 2023-05-25 | 51 |  |  |  | shenhu | 136h |
| 53 | 3.6.4 | **Audio开发以支持ECNR调试** |  | 26d | 2023-05-25 | 2023-07-03 |  |  |  |  | shenhu | 384h |
| 54 | 3.6.4.1 | audio hal carplay实施 | manual | 4d | 2023-05-04 | 2023-05-09 |  |  |  |  | shenhu | 32h |
| 55 | 3.6.4.2 | 与car service联调 | manual | 9d | 2023-05-10 | 2023-05-23 |  |  |  |  | shenhu | 72h |
| 56 | 3.6.4.3 | 系统集成调试&bugfix | manual | 9d | 2023-05-24 | 2023-06-06 |  |  |  |  | shenhu | 72h |
| 57 | 4 | 性能调优/问题初步解决满足认证(demo软件成熟度百分之70%) |  | 70d | 2023-02-27 | 2023-06-06 |  | 23d | 1d | finish no earlier than 2023-06-06 | shenhu | 560h |

Notes:
- 31: 确认提供了文档，并且已经传到github上了
- 32: 4/20 延锋提供软件demo版本
- 57: 此版本做第一轮台架预测试

| ID | WBS | Task | Type | Duration | Start | Finish | Predecessors | Total slack | Free slack | Constraint | Resources | Work |
| --- | --- | --- | --- | --- | --- | --- | --- | --- | --- | --- | --- | --- |
| 58 | 5 | **版本计划** |  | 202.88d | 2023-06-06 | 2024-04-01 |  | 0d |  |  | shenhu | 4255h |
| 59 | 5.1 | 初版（首个90%）全功能版本 | manual | 16d | 2023-06-06 | 2023-06-28 |  |  |  |  | shenhu | 128h |
| 60 | 5.2 | 第一版 | manual | 16d | 2023-06-20 | 2023-07-12 |  |  |  |  | shenhu | 128h |
| 61 | 5.3 | 第二版 | manual | 16d | 2023-07-19 | 2023-08-09 |  |  |  |  | shenhu | 128h |
| 62 | 5.4 | 第三版 | manual | 16d | 2023-08-23 | 2023-09-13 |  |  |  |  | shenhu | 128h |
| 63 | 5.5 | 第四版 | manual | 19d | 2023-10-27 | 2023-11-23 |  |  |  |  | shenhu | 152h |
| 64 | 5.6 | 第五版 | manual | 16d | 2023-12-07 | 2023-12-28 |  |  |  |  | shenhu | 128h |
| 65 | 5.7 | release 版本 | manual | 1d | 2023-06-06 | 2023-06-07 |  |  |  |  | shenhu | 8h |
| 66 | 5.8 | 版本测试计划 | manual | 185d | 2023-07-03 | 2024-04-01 |  |  |  |  | wangyunlai | 1480h |
| 67 | 5.9 | 初版（首个90%）全功能版本 | manual | 20d | 2023-07-03 | 2023-07-28 |  |  |  |  | wangyunlai | 160h |
| 68 | 5.10 | 第二版 | manual | 15d | 2023-08-14 | 2023-09-01 |  |  |  |  | wangyunlai | 120h |
| 69 | 5.11 | 第五版 | manual | 8d | 2023-12-28 | 2024-01-10 |  |  |  |  | wangyunlai | 64h |
| 70 | 5.12 | release 版本 | manual | 1d | 2023-06-06 | 2023-06-07 |  |  |  |  | wangyunlai | 8h |
| 71 | 6 | **Certification-Wireless CarPlay** |  | 3574.88d | 2010-06-07 | 2024-03-07 |  | 17d |  |  | gaoliang | 95292h |
| 72 | 6.1 | **Certification-台架测试** |  | 260d | 2023-01-23 | 2024-02-01 |  | 17d | 0d |  | gaoliang | 4208h |
| 73 | 6.1.1 | 台架预测试&正式测试询价 |  | 15d | 2023-05-09 | 2023-05-30 |  | 171.88d | 0d | start no earlier than 2023-05-09 |  |  |
| 74 | 6.1.2 | 台架测试定点 |  | 6d | 2023-05-30 | 2023-06-07 | 73 | 171.88d | 0d |  |  |  |
| 75 | 6.1.3 | PR PO流程 |  | 10d | 2023-06-07 | 2023-06-21 | 74 | 171.88d |  |  |  |  |
| 76 | 6.1.4 | 提交无线产品配置信息表（需要多方支持） |  | 15d | 2023-01-23 | 2023-02-10 | 4 | 252d | 0d | finish no earlier than 2023-02-10 | gaoliang | 120h |
| 77 | 6.1.5 | 苹果审核产品计划和配置表 |  | 10d | 2023-02-13 | 2023-02-24 | 76 | 252d |  |  | shenhu | 80h |
| 78 | 6.1.6 | Carpaly设计文档制作（依赖UI设计图确定) |  | 40d | 2023-04-07 | 2023-06-02 | 1FS+3d | 184d |  |  | gaoliang | 320h |
| 79 | 6.1.7 | 台架制作（需要原厂外设件到货） |  | 29d | 2023-04-27 | 2023-06-09 | 5 | 22.88d | 0.88d | start no earlier than 2023-04-27 | gaoliang | 232h |
| 80 | 6.1.8 | 第一轮台架预测试 |  | 15d | 2023-06-13 | 2023-07-04 | 79FS+1d, 57FS+3d | 22d | 0d | start no earlier than 2023-06-13 | gaoliang | 120h |
| 81 | 6.1.9 | debug |  | 20d | 2023-06-20 | 2023-07-18 | 80SS+5d | 22d | 0d | start no earlier than 2023-06-20 | shenhu | 160h |
| 82 | 6.1.10 | 第二轮台架预测试 |  | 15d | 2023-07-21 | 2023-08-10 | 81FS+2d | 22d | 0d |  | gaoliang | 120h |
| 83 | 6.1.11 | 提供自测报告给苹果审核 |  | 5d | 2023-08-11 | 2023-08-17 | 82 | 22d | 0d |  | gaoliang | 40h |
| 84 | 6.1.12 | 苹果审核自测报告 |  | 6d | 2023-08-18 | 2023-08-25 | 83 | 22d | 0d |  |  |  |
| 85 | 6.1.13 | 台架第一轮正式测试 |  | 15d | 2023-08-28 | 2023-09-15 | 84 | 22d | 4d |  | gaoliang | 120h |
| 86 | 6.1.14 | debug |  | 15d | 2023-09-08 | 2023-09-28 | 85SS+5d | 18d | 1d | start no earlier than 2023-09-08 | huangfeng | 120h |
| 87 | 6.1.15 | 第三轮台架预测试 |  | 10d | 2023-10-10 | 2023-10-23 | 86FS+2d | 17d | 0d | start no earlier than 2023-10-10 | gaoliang | 80h |
| 88 | 6.1.16 | debug |  | 10d | 2023-10-17 | 2023-10-30 | 87SS+5d | 83d |  |  |  |  |
| 89 | 6.1.17 | 提供自测报告给苹果审核 |  | 5d | 2023-10-24 | 2023-10-30 | 87 | 17d | 0d | start no earlier than 2023-10-24 | gaoliang | 40h |
| 90 | 6.1.18 | 苹果审核自测报告 |  | 6d | 2023-10-31 | 2023-11-07 | 89 | 17d | 0d |  | gaoliang | 48h |
| 91 | 6.1.19 | 台架第二轮正式测试 |  | 15d | 2023-11-10 | 2023-11-30 | 90FS+2d | 17d | 0d |  | gaoliang | 120h |
| 92 | 6.1.20 | debug |  | 15d | 2023-11-17 | 2023-12-07 | 91SS+5d | 17d | 0d |  | gaoliang | 120h |
| 93 | 6.1.21 | 第四轮台架预测试 |  | 10d | 2023-12-12 | 2023-12-25 | 92FS+2d | 17d | 0d |  | gaoliang | 80h |
| 94 | 6.1.22 | 提供自测报告给苹果审核 |  | 5d | 2023-12-26 | 2024-01-03 | 93 | 17d | 0d |  | gaoliang | 40h |
| 95 | 6.1.23 | 苹果审核自测报告 |  | 6d | 2024-01-04 | 2024-01-11 | 94 | 17d | 0d |  | gaoliang | 48h |
| 96 | 6.1.24 | 台架第三轮正式测试 |  | 15d | 2024-01-12 | 2024-02-01 | 95 | 17d |  |  | gaoliang | 120h |

Notes:
- 60: 第二轮台架预测试
- 61: 台架第一轮正式测试
- 62: 第三轮台架预测试
- 63: 台架第二轮正式测试
- 64: 台架第三轮正式测试
- 65: 待定
- 66: 测试计划当前仅供参考
- 70: 待定
- 76: 已完成
- 77: 依赖苹果审核
- 78: 3/31之前福特提供定稿的供CarPlay的UI/UE文档
- 79: 3/17之前拿到对手件并确认功能是Ok的

| ID | WBS | Task | Type | Duration | Start | Finish | Predecessors | Total slack | Free slack | Constraint | Resources | Work |
| --- | --- | --- | --- | --- | --- | --- | --- | --- | --- | --- | --- | --- |
| 97 | 6.2 | **Certification-ITU-T&enhance Siri** |  | 213d | 2023-02-15 | 2023-12-20 |  | 0d |  |  | gaoliang | 4223h |
| 98 | 6.2.1 | 客户提供实车至实验室 |  | 4d | 2023-08-29 | 2023-09-01 | 12 | 120d |  | finish no earlier than 2023-09-01 | ford | 32h |
| 99 | 6.2.2 | 音频测试(ITU-T Siri Enhanced Siri)询价 |  | 15d | 2023-04-23 | 2023-05-16 |  | 177.88d | 0d | start no earlier than 2023-04-23 |  |  |
| 100 | 6.2.3 | 音频测试定点 |  | 10d | 2023-05-16 | 2023-05-30 | 99 | 177.88d | 0d |  |  |  |
| 101 | 6.2.4 | PR PO流程 |  | 10d | 2023-05-30 | 2023-06-13 | 100 | 177.88d |  |  |  |  |
| 102 | 6.2.5 | 延锋提供可ECNR调试软件 | manual | 76d | 2023-02-15 | 2023-06-05 |  |  |  |  | shenhu | 608h |
| 103 | 6.2.6 | SSOW与供应商确认 | manual | 20d | 2023-04-03 | 2023-05-04 |  |  |  |  | dingchao | 160h |
| 104 | 6.2.7 | 供应商打分 | manual | 3d | 2023-05-05 | 2023-05-09 |  |  |  |  | dingchao | 24h |
| 105 | 6.2.8 | 采购上会汇报 | manual | 5d | 2023-05-10 | 2023-05-17 |  |  |  |  | dingchao | 40h |
| 106 | 6.2.9 | 供应商定点，下PR | manual | 2d | 2023-05-17 | 2023-05-19 |  |  |  |  | dingchao | 16h |
| 107 | 6.2.10 | 供应商完成debug/apqm | manual | 54d | 2023-07-17 | 2023-10-07 |  |  |  |  | dingchao | 432h |
| 108 | 6.2.11 | 供应商完成tuning/ITU/Sir | manual | 34d | 2023-10-09 | 2023-11-24 |  |  |  |  | dingchao | 272h |
| 109 | 6.2.12 | enhance Siri第一轮预测试 |  | 19.88d | 2023-07-24 | 2023-08-18 |  | 130d |  | finish no earlier than 2023-08-18 | gaoliang | 159h |
| 110 | 6.2.13 | debug |  | 31d | 2023-08-21 | 2023-10-08 |  | 99d |  | start no earlier than 2023-08-21 | baidu | 248h |
| 111 | 6.2.14 | enhance Siri第一轮正式测试 |  | 15d | 2023-10-09 | 2023-10-27 |  | 84d |  | start no earlier than 2023-10-09 | gaoliang | 120h |
| 112 | 6.2.15 | debug |  | 20d | 2023-10-30 | 2023-11-24 |  | 64d |  | start no earlier than 2023-10-30 | baidu | 160h |
| 113 | 6.2.16 | enhance Siri第二轮正式测试 |  | 16d | 2023-11-27 | 2023-12-18 |  | 48d |  | start no earlier than 2023-11-27 | gaoliang | 128h |
| 114 | 6.2.17 | 高中低三个车型的主观测试 | manual | 15d | 2023-11-29 | 2023-12-20 |  |  |  |  | dingchao | 120h |
| 115 | 6.3 | **Certification-路试** |  | 3500.88d | 2010-06-07 | 2023-11-15 |  | 71d | 54d |  | gaoliang | 28911h |
| 116 | 6.3.1 | 路试预测试询价 |  | 10d | 2023-05-15 | 2023-05-29 |  | 168.88d | 0d | start no earlier than 2023-05-15 |  |  |
| 117 | 6.3.2 | 路试预测试定点 |  | 10d | 2023-05-29 | 2023-06-12 | 116 | 168.88d | 0d |  |  |  |
| 118 | 6.3.3 | PR PO流程 |  | 10d | 2023-06-12 | 2023-06-27 | 117 | 168.88d |  |  |  |  |
| 119 | 6.3.4 | （路试）客户提供实车至实验室 |  | 4d | 2023-07-14 | 2023-07-20 |  | 151.88d |  | start no earlier than 2023-07-14 | ford | 32h |
| 120 | 6.3.5 | 路试测试第一轮预测试 |  | 5d | 2023-07-24 | 2023-07-28 |  | 51d | 0d | start no earlier than 2023-07-24 | gaoliang | 40h |
| 121 | 6.3.6 | debug |  | 15d | 2023-07-31 | 2023-08-18 | 120 | 51d | 0d |  | huangfeng | 120h |
| 122 | 6.3.7 | 路试测试第二轮预测试 |  | 5d | 2023-08-21 | 2023-08-25 | 121 | 51d | 0d |  | gaoliang | 40h |
| 123 | 6.3.8 | debug |  | 15d | 2023-08-28 | 2023-09-15 | 122 | 51d | 0d |  | huangfeng | 120h |
| 124 | 6.3.9 | 约正式实验室 |  | 15d | 2023-08-28 | 2023-09-15 | 122 | 56d | 5d |  | gaoliang | 120h |
| 125 | 6.3.10 | 路试第三轮预测试 |  | 5d | 2023-09-18 | 2023-09-22 | 123 | 51d | 0d |  | gaoliang | 40h |
| 126 | 6.3.11 | 路试正式测试询价 |  | 10d | 2010-06-07 | 2010-06-21 |  | 3546.88d | 0d | start no earlier than 2010-06-07 |  |  |
| 127 | 6.3.12 | 路试正式测试定点 |  | 5d | 2010-06-21 | 2010-06-28 | 126 | 3546.88d | 0d |  |  |  |
| 128 | 6.3.13 | PR PO流程 |  | 10d | 2010-06-28 | 2010-07-12 | 127 | 3546.88d |  |  |  |  |
| 129 | 6.3.14 | 正式测试第一轮 |  | 6d | 2023-09-25 | 2023-10-08 | 124, 125 | 51d | 0d |  | gaoliang | 48h |
| 130 | 6.3.15 | debug |  | 18d | 2023-10-09 | 2023-11-01 | 129 | 51d | 0d |  | huangfeng | 144h |
| 131 | 6.3.16 | 路试第四轮预测试 |  | 5d | 2023-11-02 | 2023-11-08 | 130 | 51d | 0d |  | gaoliang | 40h |
| 132 | 6.3.17 | 约正式实验室 |  | 15d | 2023-10-09 | 2023-10-27 | 129 | 59d | 8d |  | gaoliang | 120h |
| 133 | 6.3.18 | 正式测试第二轮 |  | 5d | 2023-11-09 | 2023-11-15 | 130, 132, 131 | 51d | 0d |  | gaoliang | 40h |

Notes:
- 98: 需要实车10/09前抵达实验室
- 119: 需要实车7/20前抵达实验室

| ID | WBS | Task | Duration | Start | Finish | Predecessors | Total slack | Free slack | Constraint | Resources | Work |
| --- | --- | --- | --- | --- | --- | --- | --- | --- | --- | --- | --- |
| 134 | 6.4 | **Certification-Performance** | 3514.88d | 2010-06-07 | 2023-12-05 |  | 57d | 40d |  | gaoliang | 29031h |
| 135 | 6.4.1 | （Performance）客户提供实车至实验室 | 4d | 2023-07-24 | 2023-07-28 |  | 145.88d |  | start no earlier than 2023-07-24 | ford | 32h |
| 136 | 6.4.2 | performance测试第一轮预测试 | 5d | 2023-07-31 | 2023-08-04 |  | 57d | 0d | start no earlier than 2023-07-31 | gaoliang | 40h |
| 137 | 6.4.3 | debug | 20d | 2023-08-07 | 2023-09-01 | 136 | 57d | 0d |  | shenhu | 160h |
| 138 | 6.4.4 | performance测试第二轮预测试 | 5d | 2023-09-04 | 2023-09-08 | 137 | 57d | 0d |  | gaoliang | 40h |
| 139 | 6.4.5 | debug | 15d | 2023-09-11 | 2023-10-07 | 138 | 62d | 5d |  | shenhu | 120h |
| 140 | 6.4.6 | 约正式实验室 | 15d | 2023-09-11 | 2023-10-07 | 138 | 57d | 0d |  | gaoliang | 120h |
| 141 | 6.4.7 | performance测试第三轮预测试 | 5d | 2023-10-08 | 2023-10-12 | 140 | 57d | 0d |  | gaoliang | 40h |
| 142 | 6.4.8 | Performance 正式测试询价 | 10d | 2010-06-07 | 2010-06-21 |  | 3561.88d |  | start no earlier than 2010-06-07 |  |  |
| 143 | 6.4.9 | Performance 正式测试定点 | 5d | 2010-06-21 | 2010-06-28 |  | 3556.88d |  | start no earlier than 2010-06-21 |  |  |
| 144 | 6.4.10 | PR PO流程 | 10d | 2010-06-28 | 2010-07-12 |  | 3546.88d |  | start no earlier than 2010-06-28 |  |  |
| 145 | 6.4.11 | 正式测试第一轮 | 5d | 2023-10-13 | 2023-10-19 | 139, 140, 141 | 57d | 0d |  | gaoliang | 40h |
| 146 | 6.4.12 | debug | 15d | 2023-10-20 | 2023-11-09 | 145 | 57d | 0d |  | shenhu | 120h |
| 147 | 6.4.13 | Performance测试第四轮预测试 | 5d | 2023-11-10 | 2023-11-16 | 146 | 65d | 8d |  | gaoliang | 40h |
| 148 | 6.4.14 | 约正式实验室 | 15d | 2023-11-08 | 2023-11-28 | 146FS-2d | 57d | 0d |  | gaoliang | 120h |
| 149 | 6.4.15 | 正式测试第二轮 | 5d | 2023-11-29 | 2023-12-05 | 145, 146, 148, 147 | 57d |  |  | gaoliang | 40h |
| 150 | 6.5 | 实际产品截图设计文档制作 | 20d | 2023-11-16 | 2023-12-13 | 133 | 51d | 34d |  | gaoliang | 160h |
| 151 | 6.6 | 苹果审核最终认证结果 | 20d | 2024-02-02 | 2024-03-07 | 150, 72, 97, 115, 134 | 17d |  |  | gaoliang | 160h |

Notes:
- 135: 需要实车7/28前抵达实验室
