Schedule from MS Project, 2023-01-16 to 2024-03-06, A marks actual dates.

## Calendars

- 标准: Mon-Fri 08:00-12:00, 13:00-17:00; Sat-Sun off. Exceptions (off unless hours are given): 2023-04-05 (清明节), 2023-04-23 08:00-12:00, 13:00-17:00 (工作日), 2023-05-01 to 2023-05-03 (劳动节), 2023-05-06 08:00-12:00, 13:00-17:00 (工作日), 2023-06-22 to 2023-06-23 (端午节), 2023-06-25 08:00-12:00, 13:00-17:00 (工作日), 2023-09-29 (中秋), 2023-10-02 to 2023-10-06 (国庆), 2023-10-07 to 2023-10-08 08:00-12:00, 13:00-17:00 (工作日), 2024-01-01 (元旦), 2024-02-09 to 2024-02-15 (春节).

## Resources

| Resource |
| --- |
| ford |
| YF |
| Inhouse |
| baidu |
| TS |
| Apple |
| zhangbinbin |
| gaoliang |
| dingchao |
| shenhu |
| huangfeng |
| chuangda |
| 三方 |
| wangyunlai |

## Schedule

| ID | WBS | Task | Type | Duration | Start | Finish | Predecessors | Complete | Remaining | Actual start | Baseline start | Baseline finish | Baseline duration | Baseline 1 start | Baseline 1 finish | Total slack | Constraint | Resources | Work | Actual work |
| --- | --- | --- | --- | --- | --- | --- | --- | --- | --- | --- | --- | --- | --- | --- | --- | --- | --- | --- | --- | --- |
| 1 | 1 | UE需求澄清 |  | 48d | 2023-01-25 A | 2023-03-31 A |  | 100% |  |  | 2023-01-25 | 2023-03-31 | 48d | 2023-01-25 | 2023-03-31 |  | finish no earlier than 2023-03-31 | zhangbinbin | 384h | 384h |
| 2 | 2 | **Preparation** |  | 44d | 2023-01-16 A | 2023-03-17 A |  | 100% |  |  | 2023-01-16 | 2023-03-17 | 44d | 2023-01-16 | 2023-03-17 |  |  | gaoliang | 528h | 528h |
| 3 | 2.1 | Ford prepare relevant project approal document |  | 6d | 2023-01-27 A | 2023-02-03 A |  | 100% |  |  | 2023-01-27 | 2023-02-03 | 6d | 2023-01-27 | 2023-02-03 |  | finish no earlier than 2023-02-03 | gaoliang | 48h | 48h |
| 4 | 2.2 | Apple approve PPID |  | 4d | 2023-01-16 A | 2023-01-20 A |  | 100% |  |  | 2023-01-16 | 2023-01-20 | 4d | 2023-01-16 | 2023-01-20 |  | start no earlier than 2023-01-16 | gaoliang | 32h | 32h |
| 5 | 2.3 | sample ready for software development |  | 12d | 2023-03-01 A | 2023-03-17 A |  | 100% |  |  | 2023-03-01 | 2023-03-17 | 12d | 2023-03-01 | 2023-03-17 |  | start no earlier than 2023-03-01 | dingchao | 96h | 96h |
| 6 | 3 | **SW DEV** |  | 241.62d | 2023-02-07 A | 2024-01-22 |  | 82% | 42.81d |  | 2023-02-07 | 2024-01-22 | 241.62d? | 2023-02-07 | 2024-01-22 | 27.25d |  | shenhu | 12820h | 9937.64h |
| 7 | 3.1 | **驱动适配、Certification** |  | 15d | 2023-03-17 A | 2023-04-10 A | 5 | 100% |  |  | 2023-03-17 | 2023-04-10 | 15d | 2023-03-17 | 2023-04-10 |  |  | shenhu | 336h | 336h |
| 8 | 3.1.1 | bonjour框架移植适配 | manual | 3d | 2023-03-17 A | 2023-03-22 A |  | 100% |  |  | 2023-03-17 | 2023-03-22 | 3d | 2023-03-17 | 2023-03-22 |  |  | shenhu | 24h | 24h |
| 9 | 3.1.2 | CarPlayResourceManger框架开发 | manual | 14d | 2023-03-20 A | 2023-04-10 A |  | 100% |  |  | 2023-03-20 | 2023-04-10 | 14d | 2023-03-20 | 2023-04-10 |  |  | shenhu | 112h | 112h |
| 10 | 3.1.3 | CarPlayApp框架开发 | manual | 7d | 2023-03-27 A | 2023-04-06 A |  | 100% |  |  | 2023-03-27 | 2023-04-06 | 7d | 2023-03-27 | 2023-04-06 |  |  | shenhu | 56h | 56h |
| 11 | 3.1.4 | 苹果MFI芯片适配: Hal层到framework层的调试 | manual | 3d | 2023-03-29 A | 2023-04-03 A |  | 100% |  |  | 2023-03-29 | 2023-04-03 | 3d | 2023-03-29 | 2023-04-03 |  |  | shenhu | 24h | 24h |
| 12 | 3.2 | IAP2 Stack集成 | manual | 30d | 2023-03-31 A | 2023-05-16 A | 5FS+10d | 100% |  |  | 2023-03-31 | 2023-05-16 | 30d | 2023-03-31 | 2023-05-16 |  |  | shenhu | 240h | 240h |
| 13 | 3.3 | **Carplay Plugin集成出图** |  | 47.88d | 2023-03-31 | 2023-06-08 | 5FS+10d | 99% | 0d | 2023-03-22 | 2023-03-31 | 2023-05-30 | 40d? | 2023-03-31 | 2023-05-30 |  |  | shenhu | 1103h | 720h |
| 14 | 3.3.1 | 协议栈plugin框架开发 | manual | 21d | 2023-03-22 A | 2023-04-21 A |  | 100% |  |  | 2023-03-22 | 2023-04-21 | 21d | 2023-03-22 | 2023-04-21 |  |  | shenhu | 168h | 168h |
| 15 | 3.3.2 | carplay主视频流适配 | manual | 12d | 2023-03-29 A | 2023-04-17 A |  | 100% |  |  | 2023-03-29 | 2023-04-17 | 12d | 2023-03-29 | 2023-04-17 |  |  | shenhu | 96h | 96h |
| 16 | 3.3.3 | carplay音乐随心听，后排显示 | manual | 17d | 2023-04-20 A | 2023-05-15 A |  | 100% |  |  | 2023-04-20 | 2023-05-15 | 17d | 2023-04-20 | 2023-05-15 |  |  | shenhu | 136h | 136h |
| 17 | 3.3.4 | carplay地图第二路视频流适配card业务 讨论 | manual | 13d | 2023-05-05 A | 2023-05-22 A |  | 100% |  |  | 2023-05-05 | 2023-05-22 | 13d | 2023-05-05 | 2023-05-22 |  |  | baidu; shenhu | 208h | 208h |
| 18 | 3.3.5 | carplay地图第二路视频流适配card业务 开发 |  | 13d | 2023-05-23 A | 2023-06-08 A | 17 | 100% |  |  | 2023-05-23 | 2023-06-08 | 13d | 2023-05-23 | 2023-06-08 |  |  | shenhu | 104h | 104h |
| 19 | 3.3.6 | carplay弹窗遮盖第三方交互业务 | manual | 1d | 2023-05-15 A | 2023-05-15 A |  | 100% |  |  | 2023-05-15 | 2023-05-15 | 1d | 2023-05-15 | 2023-05-15 |  |  | shenhu | 8h | 8h |
| 20 | 3.4 | **Carplay界面设计/交互设计** |  | 87.88d | 2023-02-07 A | 2023-06-12 |  | 99% | 0d |  | 2023-02-07 | 2023-06-12 | 87.88d | 2023-02-07 | 2023-06-12 | 0d |  | shenhu | 1860h | 1842.97h |
| 21 | 3.4.1 | 定稿的供CarPlay的UI/UE文档 | manual | 39d | 2023-02-07 A | 2023-03-31 A |  | 100% |  |  | 2023-02-07 | 2023-03-31 | 39d | 2023-02-07 | 2023-03-31 |  |  | ford | 312h | 312h |
| 22 | 3.4.2 | **Carplay界面设计/交互设计（依赖UI设计图确定)）** |  | 57.88d | 2023-03-21 A | 2023-06-12 A | 5FS+10d | 100% |  |  | 2023-03-21 | 2023-06-12 | 57.88d | 2023-03-21 | 2023-06-12 |  |  | shenhu | 845h | 845h |
| 23 | 3.4.2.1 | carplay弹窗遮盖第三方交互业务 | manual | 7d | 2023-03-21 A | 2023-03-30 A |  | 100% |  |  | 2023-03-21 | 2023-03-30 | 7d | 2023-03-21 | 2023-03-30 |  |  | shenhu | 56h | 56h |
| 24 | 3.4.2.2 | cafplay连接业务 | manual | 7d | 2023-04-11 A | 2023-04-20 A |  | 100% |  |  | 2023-04-11 | 2023-04-20 | 7d | 2023-04-11 | 2023-04-20 |  |  | shenhu | 56h | 56h |
| 25 | 3.4.2.3 | carplay重连业务 | manual | 7d | 2023-04-25 A | 2023-05-08 A |  | 100% |  |  | 2023-04-25 | 2023-05-08 | 7d | 2023-04-25 | 2023-05-08 |  |  | shenhu | 56h | 56h |
| 26 | 3.4.2.4 | carplay电话仪表显示业务 | manual | 7d | 2023-05-09 A | 2023-05-18 A |  | 100% |  |  | 2023-05-09 | 2023-05-18 | 7d | 2023-05-09 | 2023-05-18 |  |  | shenhu | 56h | 56h |
| 27 | 3.4.2.5 | carplay接口业务提供 | manual | 7d | 2023-05-18 A | 2023-05-29 A |  | 100% |  |  | 2023-05-18 | 2023-05-29 | 7d | 2023-05-18 | 2023-05-29 |  |  | shenhu | 56h | 56h |
| 28 | 3.4.2.6 | carplay方控按键需求 | manual | 10.88d | 2023-05-29 A | 2023-06-12 A |  | 100% |  |  | 2023-05-29 | 2023-06-12 | 10.88d | 2023-05-29 | 2023-06-12 |  |  | shenhu | 87h | 87h |
| 29 | 3.4.2.7 | carplay兼容13以下手机 | manual | 1.88d | 2023-06-07 A | 2023-06-08 A |  | 100% |  |  | 2023-06-07 | 2023-06-08 | 1.88d | 2023-06-07 | 2023-06-08 |  |  | shenhu | 15h | 15h |

Notes:
- 1: 相关需求需要福特UE确认，才能完成最终的需求澄清
- 3: 已完成
- 4: 已完成
- 5: 已完成
- 12: ongoing
- 17: 确认是要定搞的UI，UE
- 21: 3/31之前福特提供定稿的供CarPlay的UI/UE文档
- 25: ongoing

| ID | WBS | Task | Type | Duration | Start | Finish | Predecessors | Complete | Remaining | Baseline start | Baseline finish | Baseline duration | Baseline 1 start | Baseline 1 finish | Total slack | Free slack | Constraint | Resources | Work | Actual work |
| --- | --- | --- | --- | --- | --- | --- | --- | --- | --- | --- | --- | --- | --- | --- | --- | --- | --- | --- | --- | --- |
| 30 | 3.5 | **Audio** |  | 240.62d | 2023-02-08 A | 2024-01-22 |  | 75% | 59.18d | 2023-02-08 | 2024-01-22 | 240.62d | 2023-02-08 | 2024-01-22 | 0d |  |  | shenhu | 6061h | 4438.98h |
| 31 | 3.5.1 | 提供carplay所有接口文档 | manual | 1d | 2023-03-01 A | 2023-03-02 A |  | 100% |  | 2023-03-01 | 2023-03-02 | 1d | 2023-03-01 | 2023-03-02 |  |  |  | YF | 8h | 8h |
| 32 | 3.5.2 | 延锋提供软件demo版本 | manual | 51d | 2023-02-08 A | 2023-04-20 A |  | 100% |  | 2023-02-08 | 2023-04-20 | 51d | 2023-02-08 | 2023-04-20 |  |  |  | huangfeng | 408h | 408h |
| 33 | 3.5.3 | audio arbitration management update | manual | 28d | 2023-03-14 A | 2023-04-21 A |  | 100% |  | 2023-03-14 | 2023-04-21 | 28d | 2023-03-14 | 2023-04-21 |  |  |  | chuangda | 224h | 224h |
| 34 | 3.5.4 | Audio data control update | manual | 3d | 2023-04-03 A | 2023-04-06 A |  | 100% |  | 2023-04-03 | 2023-04-06 | 3d | 2023-04-03 | 2023-04-06 |  |  |  | chuangda | 24h | 24h |
| 35 | 3.5.5 | Audio对接 | manual | 40d | 2023-04-17 A | 2023-06-13 A | 7FS+5d | 100% |  | 2023-04-17 | 2023-06-13 | 40d | 2023-04-17 | 2023-06-13 |  |  |  | huangfeng | 320h | 320h |
| 36 | 3.5.6 | 提供初版的文档版本 | manual | 15d | 2023-03-15 A | 2023-04-06 A |  | 100% |  | 2023-03-15 | 2023-04-06 | 15d | 2023-03-15 | 2023-04-06 |  |  |  | chuangda | 120h | 120h |
| 37 | 3.5.7 | 提供最后的文档版本 | manual | 22d | 2023-03-15 A | 2023-04-14 A |  | 100% |  | 2023-03-15 | 2023-04-14 | 22d | 2023-03-15 | 2023-04-14 |  |  |  | chuangda | 176h | 176h |
| 38 | 3.5.8 | carplay音频流适配焦点适配 | manual | 31d | 2023-04-21 A | 2023-06-06 A |  | 100% |  | 2023-04-21 | 2023-06-06 | 31d | 2023-04-21 | 2023-06-06 |  |  |  | 三方 | 248h | 248h |
| 39 | 3.5.9 | aduio对接 创达 开发+联调 | manual | 31d | 2023-04-21 A | 2023-06-06 A |  | 100% |  | 2023-04-21 | 2023-06-06 | 31d | 2023-04-21 | 2023-06-06 |  |  |  | 三方 | 248h | 248h |
| 40 | 3.5.10 | aduio对接 百度 开发+联调 (需要百度完成开发工作语音指令) | manual | 30d | 2023-04-21 A | 2023-06-05 A |  | 100% |  | 2023-04-21 | 2023-06-05 | 30d | 2023-04-21 | 2023-06-05 |  |  |  | 三方 | 240h | 240h |
| 41 | 3.5.11 | 普通siri适配 | manual | 10d | 2023-05-04 A | 2023-05-17 A |  | 100% |  | 2023-05-04 | 2023-05-17 | 10d | 2023-05-04 | 2023-05-17 |  |  |  | shenhu | 80h | 80h |
| 42 | 3.5.12 | **enhanced Siri** |  | 226.75d | 2023-02-28 A | 2024-01-22 |  | 47% | 119.29d | 2023-02-28 | 2024-01-22 | 226.75d | 2023-02-28 | 2024-01-22 | 0d |  |  |  | 2040h | 1072h |
| 43 | 3.5.12.1 | enhanced Siri MRD release | manual | 33d | 2023-02-28 A | 2023-04-14 A |  | 100% |  | 2023-02-28 | 2023-04-14 | 33d | 2023-02-28 | 2023-04-14 |  |  |  | baidu | 264h | 264h |
| 44 | 3.5.12.2 | carplay SDK interface list review and release | manual | 18d | 2023-03-28 A | 2023-04-21 A |  | 100% |  | 2023-03-28 | 2023-04-21 | 18d | 2023-03-28 | 2023-04-21 |  |  |  | shenhu | 144h | 144h |
| 45 | 3.5.12.3 | integrate sdk and modeling | manual | 6d | 2023-03-27 A | 2023-04-02 A |  | 100% |  | 2023-03-27 | 2023-04-02 | 6d | 2023-03-27 | 2023-04-02 |  |  |  | baidu | 48h | 48h |
| 46 | 3.5.12.4 | KW and VAD modeling migration | manual | 125d | 2023-05-29 A | 2024-01-22 |  | 3% | 121d | 2023-05-29 | 2024-01-22 | 125d | 2023-05-29 | 2024-01-22 |  |  |  | baidu | 1000h | 32h |
| 47 | 3.5.12.5 | local navigation & Carplay navigation arbitration | manual | 25d | 2023-04-20 A | 2023-05-25 A |  | 100% |  | 2023-04-20 | 2023-05-25 | 25d | 2023-04-20 | 2023-05-25 |  |  |  | shenhu; baidu | 400h | 400h |
| 48 | 3.5.12.6 | enhancesiri适配，互斥交互业务 | manual | 23d | 2023-04-24 A | 2023-05-26 A |  | 100% |  | 2023-04-24 | 2023-05-26 | 23d | 2023-04-24 | 2023-05-26 |  |  |  | shenhu | 184h | 184h |
| 49 | 3.6 | **Location** |  | 59.88d | 2023-03-01 A | 2023-05-25 A |  | 100% |  | 2023-03-01 | 2023-05-25 | 59.88d | 2023-03-01 | 2023-05-25 |  |  |  | shenhu | 943h | 943h |
| 50 | 3.6.1 | 提供Location的提供接口和说明文档 | manual | 37d | 2023-03-01 A | 2023-04-21 A |  | 100% |  | 2023-03-01 | 2023-04-21 | 37d | 2023-03-01 | 2023-04-21 |  |  |  | chuangda | 296h | 296h |
| 51 | 3.6.2 | 验证接口和说明文档 | manual | 4d | 2023-04-25 A | 2023-04-28 A |  | 100% |  | 2023-04-25 | 2023-04-28 | 4d | 2023-04-25 | 2023-04-28 |  |  |  | shenhu | 32h | 32h |
| 52 | 3.6.3 | location nema格式位置上报 | manual | 17d | 2023-05-04 A | 2023-05-25 A | 51 | 100% |  | 2023-05-04 | 2023-05-25 | 17d | 2023-05-04 | 2023-05-25 |  |  |  | shenhu | 136h | 136h |
| 53 | 3.7 | **Audio开发以支持ECNR调试** |  | 23d | 2023-06-06 A | 2023-07-07 |  | 20% | 18.4d | 2023-06-06 | 2023-07-07 | 23d | 2023-05-25 | 2023-07-10 | 163d |  |  | shenhu | 344h | 76.8h |
| 54 | 3.7.1 | audio hal carplay实施 | manual | 5d | 2023-06-06 A | 2023-06-12 A | 102FS+10d | 100% |  | 2023-06-06 | 2023-06-12 | 5d | 2023-06-06 | 2023-06-12 |  |  |  | shenhu | 40h | 40h |
| 55 | 3.7.2 | audio 与cerence 联调 |  | 5d | 2023-06-13 | 2023-06-19 | 54 |  |  | 2023-06-13 | 2023-06-19 | 5d | 2023-06-13 | 2023-06-19 | 146d | 9.12d |  |  |  |  |
| 56 | 3.7.3 | 与car service联调 | manual | 5d | 2023-06-20 | 2023-06-27 |  |  |  | 2023-06-20 | 2023-06-27 | 5d | 2023-06-20 | 2023-06-27 |  |  |  | shenhu | 40h |  |
| 57 | 3.7.4 | 系统集成调试&bugfix |  | 10d | 2023-06-26 | 2023-07-07 |  |  |  | 2023-06-26 | 2023-07-07 | 10d | 2023-06-26 | 2023-07-07 | 163d |  | start no earlier than 2023-06-26 | shenhu | 80h |  |
| 58 | 4 | 性能调优/问题初步解决满足认证(demo软件成熟度百分之70%) |  | 70d | 2023-02-27 A | 2023-06-06 |  | 96% | 3d | 2023-02-27 | 2023-06-06 | 70d | 2023-02-27 | 2023-06-06 | 13d | 1d | finish no earlier than 2023-06-06 | shenhu | 560h | 536h |

Notes:
- 31: 确认提供了文档，并且已经传到github上了
- 32: 4/20 延锋提供软件demo版本
- 35: TS YF
- 41: 按键Siri
- 58: 此版本做第一轮台架预测试

| ID | WBS | Task | Type | Duration | Start | Finish | Predecessors | Complete | Remaining | Baseline start | Baseline finish | Baseline duration | Baseline 1 start | Baseline 1 finish | Total slack | Free slack | Constraint | Resources | Work | Actual work |
| --- | --- | --- | --- | --- | --- | --- | --- | --- | --- | --- | --- | --- | --- | --- | --- | --- | --- | --- | --- | --- |
| 59 | 5 | **版本计划** |  | 150.88d | 2023-06-06 A | 2024-01-10 |  | 14% | 130.06d | 2023-06-06 | 2024-04-01 | 203d | 2023-06-06 | 2024-04-01 | 35d |  |  | shenhu | 1439h | 198.48h |
| 60 | 5.1 | 初版（首个90%）全功能版本 | manual | 4d | 2023-06-06 A | 2023-06-12 A |  | 100% |  | 2023-06-06 | 2023-06-12 | 4d | 2023-06-06 | 2023-06-12 |  |  |  | shenhu | 32h | 32h |
| 61 | 5.2 | 第一版 |  | 3d | 2023-07-18 | 2023-07-20 | 81FS-1d |  |  | 2023-06-20 | 2023-07-12 | 16d | 2023-06-20 | 2023-07-12 | 154d |  |  | shenhu | 24h |  |
| 62 | 5.3 | 第二版 | manual | 5d | 2023-08-21 | 2023-08-25 | 85SS-5d |  |  | 2023-07-19 | 2023-08-09 | 16d | 2023-07-19 | 2023-08-09 |  |  |  | shenhu | 40h |  |
| 63 | 5.4 | 第三版 | manual | 3d | 2023-10-07 | 2023-10-09 | 87SS-3d |  |  | 2023-08-23 | 2023-09-13 | 16d | 2023-08-23 | 2023-09-13 |  |  |  | shenhu | 24h |  |
| 64 | 5.5 | 第四版 | manual | 8d | 2023-11-01 | 2023-11-10 |  |  |  | 2023-10-27 | 2023-11-23 | 19d | 2023-10-27 | 2023-11-23 |  |  |  | shenhu | 64h |  |
| 65 | 5.6 | 第五版 | manual | 6d | 2024-01-03 | 2024-01-10 |  |  |  | 2023-12-07 | 2023-12-28 | 16d | 2023-12-07 | 2023-12-28 |  |  |  | shenhu | 48h |  |
| 66 | 6 | **release 版本(功能测试)** |  | 131.88d | 2023-07-03 | 2024-01-09 |  |  |  | 2023-06-06 | 2023-06-07 | 1d | 2023-06-06 | 2023-06-07 | 0d |  |  | shenhu | 1407h |  |
| 67 | 6.1 | 初版（首个90%）全功能版本 | manual | 20d | 2023-07-03 | 2023-07-28 |  |  |  | 2023-07-03 | 2023-07-28 | 20d | 2023-07-03 | 2023-07-28 |  |  |  | wangyunlai | 160h |  |
| 68 | 6.2 | 第二版 | manual | 15d | 2023-08-14 | 2023-09-01 |  |  |  | 2023-08-14 | 2023-09-01 | 15d | 2023-08-14 | 2023-09-01 |  |  |  | wangyunlai | 120h |  |
| 69 | 6.3 | 第五版 | manual | 9d | 2023-12-28 | 2024-01-10 |  |  |  | 2023-12-28 | 2024-01-09 | 8d | 2023-12-28 | 2024-01-09 |  |  |  | wangyunlai | 64h |  |
| 70 | 6.4 | release 版本 | manual | 1d | 2023-07-03 | 2023-07-04 |  |  |  | 2023-06-06 | 2023-06-07 | 1d | 2023-06-06 | 2023-06-07 |  |  |  | wangyunlai | 8h |  |
| 71 | 7 | **Certification-Wireless CarPlay** |  | 280d | 2023-01-23 A | 2024-03-06 |  | 30% | 195.72d | 2023-01-23 | 2024-03-06 | 280d | 2023-01-23 | 2024-03-06 | 0d |  |  | gaoliang | 14412h | 3962.76h |
| 72 | 7.1 | **Certification-台架测试** |  | 260d | 2023-01-23 A | 2024-01-31 |  | 46% | 139.99d | 2023-01-23 | 2024-01-31 | 260d | 2023-01-23 | 2024-01-31 | 0d |  |  | gaoliang | 4295h | 1951.06h |
| 73 | 7.1.1 | 台架预测试&正式测试询价 |  | 5d | 2023-05-09 A | 2023-05-16 A |  | 100% |  | 2023-05-09 | 2023-05-16 | 5d | 2023-05-09 | 2023-05-16 |  |  | finish no earlier than 2023-05-09 |  |  |  |
| 74 | 7.1.2 | 台架测试定点 |  | 6d | 2023-05-16 A | 2023-05-24 A | 73 | 100% |  | 2023-05-16 | 2023-05-24 | 6d | 2023-05-16 | 2023-05-24 |  |  |  |  |  |  |
| 75 | 7.1.3 | PR PO流程 |  | 10d | 2023-05-24 A | 2023-06-07 A | 74 | 100% |  | 2023-05-24 | 2023-06-07 | 10d | 2023-05-24 | 2023-06-07 |  |  |  |  |  |  |
| 76 | 7.1.4 | 提交无线产品配置信息表（需要多方支持） |  | 15d | 2023-01-23 A | 2023-02-10 A | 4 | 100% |  | 2023-01-23 | 2023-02-10 | 15d | 2023-01-23 | 2023-02-10 |  |  | finish no earlier than 2023-02-10 | gaoliang | 120h | 120h |
| 77 | 7.1.5 | 苹果审核产品计划和配置表 |  | 10d | 2023-02-13 A | 2023-02-24 A | 76 | 100% |  | 2023-02-13 | 2023-02-24 | 10d | 2023-02-13 | 2023-02-24 |  |  |  | shenhu | 80h | 80h |
| 78 | 7.1.6 | Carpaly设计文档制作（依赖UI设计图确定) |  | 50d | 2023-04-07 A | 2023-06-16 A | 1FS+3d | 100% |  | 2023-04-07 | 2023-06-16 | 50d | 2023-04-07 | 2023-06-16 |  |  | finish no earlier than 2023-06-16 | gaoliang | 400h | 400h |
| 79 | 7.1.7 | 台架制作（需要原厂外设件到货） |  | 29.88d | 2023-04-27 A | 2023-06-09 A | 5 | 100% |  | 2023-04-27 | 2023-06-09 | 29.88d | 2023-04-27 | 2023-06-09 |  |  | finish no earlier than 2023-06-09 | gaoliang | 239h | 239h |
| 80 | 7.1.8 | 第一轮台架预测试 |  | 15d | 2023-06-13 A | 2023-07-04 | 58FS+3d, 79FS+1d | 80% | 3d | 2023-06-13 | 2023-07-04 | 15d | 2023-06-13 | 2023-07-04 | 146d | 0d | start no earlier than 2023-06-13 | gaoliang | 120h | 96h |
| 81 | 7.1.9 | debug |  | 20d | 2023-06-20 A | 2023-07-18 | 80SS+5d | 35% | 13d | 2023-06-20 | 2023-07-18 | 20d | 2023-06-20 | 2023-07-18 | 5d | 0d | start no earlier than 2023-06-20 | shenhu | 160h | 56h |
| 82 | 7.1.10 | 第二轮台架预测试 |  | 15d | 2023-07-21 | 2023-08-10 | 81FS+2d |  |  | 2023-07-21 | 2023-08-10 | 15d | 2023-07-21 | 2023-08-10 | 5d | 0d |  | gaoliang | 120h |  |
| 83 | 7.1.11 | 提供自测报告给苹果审核 |  | 5d | 2023-08-11 | 2023-08-17 | 82 |  |  | 2023-08-11 | 2023-08-17 | 5d | 2023-08-11 | 2023-08-17 | 5d | 0d |  | gaoliang | 40h |  |
| 84 | 7.1.12 | 苹果审核自测报告 |  | 6d | 2023-08-18 | 2023-08-25 | 83 |  |  | 2023-08-18 | 2023-08-25 | 6d | 2023-08-18 | 2023-08-25 | 5d | 0d |  |  |  |  |
| 85 | 7.1.13 | 台架第一轮正式测试 |  | 15d | 2023-08-28 | 2023-09-15 | 84 |  |  | 2023-08-28 | 2023-09-15 | 15d | 2023-08-28 | 2023-09-15 | 5d | 0d |  | gaoliang | 120h |  |
| 86 | 7.1.14 | debug |  | 15d | 2023-09-08 | 2023-09-28 | 85SS+5d |  |  | 2023-09-08 | 2023-09-28 | 15d | 2023-09-08 | 2023-09-28 | 1d |  | start no earlier than 2023-09-08 | huangfeng | 120h |  |
| 87 | 7.1.15 | 第三轮台架预测试 |  | 10d | 2023-10-10 | 2023-10-23 | 86FS+2d |  |  | 2023-10-10 | 2023-10-23 | 10d | 2023-10-10 | 2023-10-23 | 0d |  | start no earlier than 2023-10-10 | gaoliang | 80h |  |
| 88 | 7.1.16 | debug |  | 10d | 2023-10-17 | 2023-10-30 | 87SS+5d |  |  | 2023-10-17 | 2023-10-30 | 10d | 2023-10-17 | 2023-10-30 | 66d |  |  |  |  |  |
| 89 | 7.1.17 | 提供自测报告给苹果审核 |  | 5d | 2023-10-24 | 2023-10-30 | 87 |  |  | 2023-10-24 | 2023-10-30 | 5d | 2023-10-24 | 2023-10-30 | 0d |  | start no earlier than 2023-10-24 | gaoliang | 40h |  |
| 90 | 7.1.18 | 苹果审核自测报告 |  | 6d | 2023-10-31 | 2023-11-07 | 89 |  |  | 2023-10-31 | 2023-11-07 | 6d | 2023-10-31 | 2023-11-07 | 0d |  |  | gaoliang | 48h |  |
| 91 | 7.1.19 | 台架第二轮正式测试 |  | 15d | 2023-11-10 | 2023-11-30 | 90FS+2d |  |  | 2023-11-10 | 2023-11-30 | 15d | 2023-11-10 | 2023-11-30 | 0d |  |  | gaoliang | 120h |  |
| 92 | 7.1.20 | debug |  | 15d | 2023-11-17 | 2023-12-07 | 91SS+5d |  |  | 2023-11-17 | 2023-12-07 | 15d | 2023-11-17 | 2023-12-07 | 0d |  |  | gaoliang | 120h |  |
| 93 | 7.1.21 | 第四轮台架预测试 |  | 10d | 2023-12-12 | 2023-12-25 | 92FS+2d |  |  | 2023-12-12 | 2023-12-25 | 10d | 2023-12-12 | 2023-12-25 | 0d |  |  | gaoliang | 80h |  |
| 94 | 7.1.22 | 提供自测报告给苹果审核 |  | 5d | 2023-12-26 | 2024-01-02 | 93 |  |  | 2023-12-26 | 2024-01-02 | 5d | 2023-12-26 | 2024-01-02 | 0d |  |  | gaoliang | 40h |  |
| 95 | 7.1.23 | 苹果审核自测报告 |  | 6d | 2024-01-03 | 2024-01-10 | 94 |  |  | 2024-01-03 | 2024-01-10 | 6d | 2024-01-03 | 2024-01-10 | 0d |  |  | gaoliang | 48h |  |
| 96 | 7.1.24 | 台架第三轮正式测试 |  | 15d | 2024-01-11 | 2024-01-31 | 95 |  |  | 2024-01-11 | 2024-01-31 | 15d | 2024-01-11 | 2024-01-31 | 0d |  |  | gaoliang | 120h |  |

Notes:
- 60: (bench test 第一轮预测试)
- 61: 第二轮台架预测试
- 62: 台架第一轮正式测试
- 63: 第三轮台架预测试
- 64: 台架第二轮正式测试
- 65: 台架第三轮正式测试
- 66: 待定
- 70: 待定
- 76: 已完成
- 77: 依赖苹果审核
- 78: 3/31之前福特提供定稿的供CarPlay的UI/UE文档
- 79: 3/17之前拿到对手件并确认功能是Ok的

| ID | WBS | Task | Type | Duration | Start | Finish | Predecessors | Complete | Remaining | Baseline start | Baseline finish | Baseline duration | Baseline 1 start | Baseline 1 finish | Total slack | Free slack | Constraint | Resources | Work | Actual work |
| --- | --- | --- | --- | --- | --- | --- | --- | --- | --- | --- | --- | --- | --- | --- | --- | --- | --- | --- | --- | --- |
| 97 | 7.2 | **Certification-ITU-T&enhance Siri** |  | 180d | 2023-04-03 A | 2023-12-20 |  | 26% | 133.17d | 2023-04-03 | 2023-12-20 | 180d | 2023-04-03 | 2023-12-20 | 29.88d |  |  | gaoliang | 3718h | 901.61h |
| 98 | 7.2.1 | 客户提供实车至实验室 |  | 4d | 2023-08-29 | 2023-09-01 | 12 |  |  | 2023-08-29 | 2023-09-01 | 4d | 2023-08-29 | 2023-09-01 | 103d |  | finish no earlier than 2023-09-01 | ford | 32h |  |
| 99 | 7.2.2 | 音频测试(ITU-T Siri Enhanced Siri)询价 |  | 15d | 2023-04-23 A | 2023-05-16 A |  | 100% |  | 2023-04-23 | 2023-05-16 | 15d | 2023-04-23 | 2023-05-16 |  |  | start no earlier than 2023-04-23 |  |  |  |
| 100 | 7.2.3 | 供应商打分 | manual | 3d | 2023-05-05 A | 2023-05-09 A |  | 100% |  | 2023-05-05 | 2023-05-09 | 3d | 2023-05-05 | 2023-05-09 |  |  |  | dingchao | 24h | 24h |
| 101 | 7.2.4 | 音频测试定点 |  | 4.88d | 2023-05-16 A | 2023-05-22 A | 99 | 100% |  | 2023-05-16 | 2023-05-22 | 4.88d | 2023-05-16 | 2023-05-22 |  |  |  |  |  |  |
| 102 | 7.2.5 | SSOW与供应商确认 | manual | 44.88d | 2023-04-03 A | 2023-06-06 A |  | 100% |  | 2023-04-03 | 2023-06-06 | 44.88d | 2023-04-03 | 2023-05-22 |  |  |  | dingchao | 359h | 359h |
| 103 | 7.2.6 | 采购上会汇报 | manual | 5d | 2023-05-10 A | 2023-05-17 A |  | 100% |  | 2023-05-10 | 2023-05-17 | 5d | 2023-05-10 | 2023-05-17 |  |  |  | dingchao | 40h | 40h |
| 104 | 7.2.7 | siri 供应商定点，下PR,PO | manual | 13d | 2023-05-17 A | 2023-06-05 A |  | 100% |  | 2023-05-17 | 2023-06-05 | 13d | 2023-05-17 | 2023-06-05 |  |  |  | dingchao | 104h | 104h |
| 105 | 7.2.8 | enhance siri供应商定点，下PR,PO | manual | 15d | 2023-06-05 | 2023-06-26 |  |  |  | 2023-06-05 | 2023-06-26 | 15d | 2023-06-05 | 2023-06-26 |  |  |  |  |  |  |
| 106 | 7.2.9 | cerence 提供 carplay 参数 |  | 10d | 2023-06-19 | 2023-07-04 | 104FS+10d |  |  | 2023-06-19 | 2023-07-04 | 10d | 2023-06-19 | 2023-07-04 | 136.88d | 0d |  |  |  |  |
| 107 | 7.2.10 | 延锋提供可ECNR调试软件 |  | 10d | 2023-07-04 | 2023-07-18 | 55, 106 |  |  | 2023-07-04 | 2023-07-18 | 10d | 2023-07-04 | 2023-07-18 | 136.88d |  |  | shenhu | 80h |  |
| 108 | 7.2.11 | 供应商完成debug/apqm | manual | 54d | 2023-07-17 | 2023-10-07 |  |  |  | 2023-07-17 | 2023-10-07 | 54d | 2023-07-17 | 2023-10-07 |  |  |  | dingchao | 432h |  |
| 109 | 7.2.12 | 供应商完成tuning/ITU/Sir | manual | 34d | 2023-10-09 | 2023-11-24 |  |  |  | 2023-10-09 | 2023-11-24 | 34d | 2023-10-09 | 2023-11-24 |  |  |  | dingchao | 272h |  |
| 110 | 7.2.13 | enhance Siri第一轮预测试 |  | 19.88d | 2023-07-24 | 2023-08-18 |  |  |  | 2023-07-24 | 2023-08-18 | 19.88d | 2023-07-24 | 2023-08-18 | 113d |  | finish no earlier than 2023-08-18 | gaoliang | 159h |  |
| 111 | 7.2.14 | debug |  | 31d | 2023-08-21 | 2023-10-08 |  |  |  | 2023-08-21 | 2023-10-08 | 31d | 2023-08-21 | 2023-10-08 | 82d |  | start no earlier than 2023-08-21 | baidu | 248h |  |
| 112 | 7.2.15 | enhance Siri第一轮正式测试 |  | 15d | 2023-10-09 | 2023-10-27 |  |  |  | 2023-10-09 | 2023-10-27 | 15d | 2023-10-09 | 2023-10-27 | 67d |  | start no earlier than 2023-10-09 | gaoliang | 120h |  |
| 113 | 7.2.16 | debug |  | 20d | 2023-10-30 | 2023-11-24 |  |  |  | 2023-10-30 | 2023-11-24 | 20d | 2023-10-30 | 2023-11-24 | 47d |  | start no earlier than 2023-10-30 | baidu | 160h |  |
| 114 | 7.2.17 | enhance Siri第二轮正式测试 |  | 16d | 2023-11-27 | 2023-12-18 |  |  |  | 2023-11-27 | 2023-12-18 | 16d | 2023-11-27 | 2023-12-18 | 31d |  | start no earlier than 2023-11-27 | gaoliang | 128h |  |
| 115 | 7.2.18 | 高中低三个车型的主观测试 | manual | 15d | 2023-11-29 | 2023-12-20 |  |  |  | 2023-11-29 | 2023-12-20 | 15d | 2023-11-29 | 2023-12-20 |  |  |  | dingchao | 120h |  |
| 116 | 7.3 | **Certification-路试** |  | 127.88d | 2023-05-15 A | 2023-11-15 |  | 27% | 93.62d | 2023-05-15 | 2023-11-15 | 127.88d | 2023-05-15 | 2023-11-15 | 54d |  |  | gaoliang | 1927h | 274.02h |
| 117 | 7.3.1 | 路试预测试询价 |  | 10d | 2023-05-15 A | 2023-05-29 A |  | 100% |  | 2023-05-15 | 2023-05-29 | 10d | 2023-05-15 | 2023-05-29 |  |  | start no earlier than 2023-05-15 |  |  |  |
| 118 | 7.3.2 | 路试预测试定点 |  | 10d | 2023-05-29 A | 2023-06-12 A | 117 | 100% |  | 2023-05-29 | 2023-06-12 | 10d | 2023-05-29 | 2023-06-12 |  |  |  |  |  |  |
| 119 | 7.3.3 | PR PO流程 |  | 10d | 2023-06-12 | 2023-06-27 | 118 |  |  | 2023-06-12 | 2023-06-27 | 10d | 2023-06-12 | 2023-06-27 | 151.88d |  |  |  |  |  |
| 120 | 7.3.4 | （路试）客户提供实车至实验室 |  | 4d | 2023-07-14 | 2023-07-20 |  |  |  | 2023-07-14 | 2023-07-20 | 4d | 2023-07-14 | 2023-07-20 | 134.88d |  | start no earlier than 2023-07-14 | ford | 32h |  |
| 121 | 7.3.5 | 路试测试第一轮预测试 |  | 5d | 2023-07-24 | 2023-07-28 |  |  |  | 2023-07-24 | 2023-07-28 | 5d | 2023-07-24 | 2023-07-28 | 34d | 0d | start no earlier than 2023-07-24 | gaoliang | 40h |  |
| 122 | 7.3.6 | debug |  | 15d | 2023-07-31 | 2023-08-18 | 121 |  |  | 2023-07-31 | 2023-08-18 | 15d | 2023-07-31 | 2023-08-18 | 34d | 0d |  | huangfeng | 120h |  |
| 123 | 7.3.7 | 路试测试第二轮预测试 |  | 5d | 2023-08-21 | 2023-08-25 | 122 |  |  | 2023-08-21 | 2023-08-25 | 5d | 2023-08-21 | 2023-08-25 | 34d | 0d |  | gaoliang | 40h |  |
| 124 | 7.3.8 | debug |  | 15d | 2023-08-28 | 2023-09-15 | 123 |  |  | 2023-08-28 | 2023-09-15 | 15d | 2023-08-28 | 2023-09-15 | 34d | 0d |  | huangfeng | 120h |  |
| 125 | 7.3.9 | 约正式实验室 |  | 15d | 2023-08-28 | 2023-09-15 | 123 |  |  | 2023-08-28 | 2023-09-15 | 15d | 2023-08-28 | 2023-09-15 | 39d | 5d |  | gaoliang | 120h |  |
| 126 | 7.3.10 | 路试第三轮预测试 |  | 5d | 2023-09-18 | 2023-09-22 | 124 |  |  | 2023-09-18 | 2023-09-22 | 5d | 2023-09-18 | 2023-09-22 | 34d | 0d |  | gaoliang | 40h |  |
| 127 | 7.3.11 | 路试正式测试询价 |  | 10d | 2023-06-07 A | 2023-06-20 A |  | 100% |  | 2023-06-07 | 2023-06-20 | 10d | 2023-06-07 | 2023-06-20 |  |  | start no earlier than 2010-06-07 |  |  |  |
| 128 | 7.3.12 | 路试正式测试定点 |  | 5d | 2023-06-21 A | 2023-06-28 A | 127 | 100% |  | 2023-06-21 | 2023-06-28 | 5d | 2023-06-21 | 2023-06-28 |  |  |  |  |  |  |
| 129 | 7.3.13 | PR PO流程 |  | 10d | 2023-06-29 A | 2023-07-12 A | 128 | 100% |  | 2023-06-29 | 2023-07-12 | 10d | 2023-06-29 | 2023-07-12 |  |  |  |  |  |  |
| 130 | 7.3.14 | 正式测试第一轮 |  | 6d | 2023-09-25 | 2023-10-08 | 125, 126 |  |  | 2023-09-25 | 2023-10-08 | 6d | 2023-09-25 | 2023-10-08 | 34d | 0d |  | gaoliang | 48h |  |
| 131 | 7.3.15 | debug |  | 18d | 2023-10-09 | 2023-11-01 | 130 |  |  | 2023-10-09 | 2023-11-01 | 18d | 2023-10-09 | 2023-11-01 | 34d | 0d |  | huangfeng | 144h |  |
| 132 | 7.3.16 | 路试第四轮预测试 |  | 5d | 2023-11-02 | 2023-11-08 | 131 |  |  | 2023-11-02 | 2023-11-08 | 5d | 2023-11-02 | 2023-11-08 | 34d | 0d |  | gaoliang | 40h |  |
| 133 | 7.3.17 | 约正式实验室 |  | 15d | 2023-10-09 | 2023-10-27 | 130 |  |  | 2023-10-09 | 2023-10-27 | 15d | 2023-10-09 | 2023-10-27 | 42d | 8d |  | gaoliang | 120h |  |
| 134 | 7.3.18 | 正式测试第二轮 |  | 5d | 2023-11-09 | 2023-11-15 | 131, 132, 133 |  |  | 2023-11-09 | 2023-11-15 | 5d | 2023-11-09 | 2023-11-15 | 34d | 0d |  | gaoliang | 40h |  |

Notes:
- 98: 需要实车10/09前抵达实验室
- 120: 需要实车7/20前抵达实验室

| ID | WBS | Task | Duration | Start | Finish | Predecessors | Complete | Remaining | Baseline start | Baseline finish | Baseline duration | Baseline 1 start | Baseline 1 finish | Total slack | Free slack | Constraint | Resources | Work | Actual work |
| --- | --- | --- | --- | --- | --- | --- | --- | --- | --- | --- | --- | --- | --- | --- | --- | --- | --- | --- | --- |
| 135 | 7.4 | **Certification-Performance** | 125d | 2023-06-07 A | 2023-12-05 |  | 16% | 104.77d | 2023-06-07 | 2023-12-05 | 125d | 2023-06-07 | 2023-12-05 | 40d |  |  | gaoliang | 1912h | 161.87h |
| 136 | 7.4.1 | （Performance）客户提供实车至实验室 | 4d | 2023-07-24 | 2023-07-28 |  |  |  | 2023-07-24 | 2023-07-28 | 4d | 2023-07-24 | 2023-07-28 | 128.88d |  | start no earlier than 2023-07-24 | ford | 32h |  |
| 137 | 7.4.2 | performance测试第一轮预测试 | 5d | 2023-07-31 | 2023-08-04 |  |  |  | 2023-07-31 | 2023-08-04 | 5d | 2023-07-31 | 2023-08-04 | 40d | 0d | start no earlier than 2023-07-31 | gaoliang | 40h |  |
| 138 | 7.4.3 | debug | 20d | 2023-08-07 | 2023-09-01 | 137 |  |  | 2023-08-07 | 2023-09-01 | 20d | 2023-08-07 | 2023-09-01 | 40d | 0d |  | shenhu | 160h |  |
| 139 | 7.4.4 | performance测试第二轮预测试 | 5d | 2023-09-04 | 2023-09-08 | 138 |  |  | 2023-09-04 | 2023-09-08 | 5d | 2023-09-04 | 2023-09-08 | 40d | 0d |  | gaoliang | 40h |  |
| 140 | 7.4.5 | debug | 15d | 2023-09-11 | 2023-10-07 | 139 |  |  | 2023-09-11 | 2023-10-07 | 15d | 2023-09-11 | 2023-10-07 | 45d | 5d |  | shenhu | 120h |  |
| 141 | 7.4.6 | performance测试第三轮预测试 | 15d | 2023-09-11 | 2023-10-07 | 139 |  |  | 2023-09-11 | 2023-10-07 | 15d | 2023-09-11 | 2023-10-07 | 40d | 0d |  | gaoliang | 120h |  |
| 142 | 7.4.7 | Performance 正式测试询价 | 5d | 2023-10-08 | 2023-10-12 | 141 |  |  | 2023-10-08 | 2023-10-12 | 5d | 2023-10-08 | 2023-10-12 | 40d | 0d |  | gaoliang | 40h |  |
| 143 | 7.4.8 | Performance 正式测试定点 | 10d | 2023-06-07 A | 2023-06-20 A |  | 100% |  | 2023-06-07 | 2023-06-20 | 10d | 2023-06-07 | 2023-06-20 |  |  | start no earlier than 2010-06-07 |  |  |  |
| 144 | 7.4.9 | PR PO流程 | 5d | 2023-06-21 A | 2023-06-28 |  | 50% | 2.5d | 2023-06-21 | 2023-06-28 | 5d | 2023-06-21 | 2023-06-28 | 150d |  | start no earlier than 2010-06-21 |  |  |  |
| 145 | 7.4.10 | 正式测试第一轮 | 10d | 2023-06-29 A | 2023-07-12 A |  | 100% |  | 2023-06-29 | 2023-07-12 | 10d | 2023-06-29 | 2023-07-12 |  |  | start no earlier than 2010-06-28 |  |  |  |
| 146 | 7.4.11 | debug | 5d | 2023-10-13 | 2023-10-19 | 140, 141, 142 |  |  | 2023-10-13 | 2023-10-19 | 5d | 2023-10-13 | 2023-10-19 | 40d | 0d |  | gaoliang | 40h |  |
| 147 | 7.4.12 | Performance测试第四轮预测试 | 15d | 2023-10-20 | 2023-11-09 | 146 |  |  | 2023-10-20 | 2023-11-09 | 15d | 2023-10-20 | 2023-11-09 | 40d | 0d |  | shenhu | 120h |  |
| 148 | 7.4.13 | 约正式实验室 | 5d | 2023-11-10 | 2023-11-16 | 147 |  |  | 2023-11-10 | 2023-11-16 | 5d | 2023-11-10 | 2023-11-16 | 48d | 8d |  | gaoliang | 40h |  |
| 150 | 7.4.14 | 正式测试第二轮 | 5d | 2023-11-29 | 2023-12-05 | 146, 147, 148 |  |  | 2023-11-29 | 2023-12-05 | 5d | 2023-11-29 | 2023-12-05 | 40d |  |  | gaoliang | 40h |  |
| 151 | 7.5 | 实际产品截图设计文档制作 | 20d | 2023-11-16 | 2023-12-13 | 134 |  |  | 2023-11-16 | 2023-12-13 | 20d | 2023-11-16 | 2023-12-13 | 34d |  |  | gaoliang | 160h |  |
| 152 | 7.6 | 苹果审核最终认证结果 | 20d | 2024-02-01 | 2024-03-06 | 72, 97, 116, 135, 151 |  |  | 2024-02-01 | 2024-03-06 | 20d | 2024-02-01 | 2024-03-06 | 0d |  |  | gaoliang | 160h |  |

Notes:
- 136: 需要实车7/28前抵达实验室
