# Carplay development

Schedule from MS Project, 2021-03-31 to 2024-05-22, status date 2023-03-27, A marks actual dates.

## Calendars

- 标准: Mon-Fri 08:00-12:00, 13:00-17:00; Sat-Sun off. Exceptions (off unless hours are given): 2023-04-23 08:00-12:00, 13:00-17:00 (五一调休2), 2023-05-06 08:00-12:00, 13:00-17:00 (五一调休1), 2023-10-01 to 2023-10-07 (国庆), 2024-01-01 to 2024-01-03 (元旦), 2024-02-09 to 2024-02-16 (春节), 2024-05-01 (五一).

## Resources

| Resource |
| --- |
| 高靓 |
| gaoliang |
| xuepeng |
| qiaopeng |
| wangyunlai |
| ford |
| zhangbinbin |
| qiaoqiao |
| liu |
| liuqiong |
| baidu |
| YF |
| Inhouse |
| Apple |
| huangfeng |
| shenhu |
| TS |

## Schedule

| ID | WBS | Task | Type | Duration | Start | Finish | Predecessors | Complete | Remaining | Baseline start | Baseline finish | Baseline duration | Total slack | Constraint | Resources | Work | Actual work | 依赖项 |
| --- | --- | --- | --- | --- | --- | --- | --- | --- | --- | --- | --- | --- | --- | --- | --- | --- | --- | --- |
| 1 | 1 | U611MCA | manual | 1d? | 2021-03-31 | 2021-03-31 |  |  |  | 2021-03-31 | 2021-03-31 | 1d? |  |  |  |  |  |  |
| 2 | 2 | DCV | manual | 1d | 2023-02-08 A | 2023-02-08 A |  | 100% |  | 2023-02-08 | 2023-02-08 | 1d |  |  |  |  |  |  |
| 3 | 3 | PEC | manual | 1d | 2023-08-11 A | 2023-08-11 A |  | 100% |  | 2023-08-11 | 2023-08-11 | 1d? |  |  |  |  |  |  |
| 4 | 4 | FEC | manual | 1d? | 2023-09-06 | 2023-09-06 |  |  |  | 2023-09-06 | 2023-09-06 | 1d? |  |  |  |  |  |  |
| 5 | 5 | TT | manual | 1d? | 2023-09-20 | 2023-09-20 |  |  |  | 2023-09-20 | 2023-09-20 | 1d? |  |  |  |  |  |  |
| 6 | 6 | PP | manual | 1d? | 2023-12-06 | 2023-12-06 |  |  |  | 2023-12-06 | 2023-12-06 | 1d? |  |  |  |  |  |  |
| 7 | 7 | MP1 | manual | 1d | 2021-03-31 | 2021-03-31 |  |  |  | 2021-03-31 | 2021-03-31 | 1d |  |  |  |  |  |  |
| 8 | 8 | OKTB | manual | 1d | 2021-03-31 | 2021-03-31 |  |  |  | 2021-03-31 | 2021-03-31 | 1d |  |  |  |  |  |  |
| 9 | 9 | U625ICA2/MCA | manual | 1d? | 2021-03-31 | 2021-03-31 |  |  |  | 2021-03-31 | 2021-03-31 | 1d? |  |  |  |  |  |  |
| 10 | 10 | FDJ | manual | 1d? | 2023-05-26 | 2023-05-26 |  |  |  | 2023-05-26 | 2023-05-26 | 1d? |  |  |  |  |  |  |
| 11 | 11 | DCV | manual | 1d | 2021-03-31 | 2021-03-31 |  |  |  | 2021-03-31 | 2021-03-31 | 1d |  |  |  |  |  |  |
| 12 | 12 | PEC | manual | 1d | 2021-03-31 | 2021-03-31 |  |  |  | 2021-03-31 | 2021-03-31 | 1d |  |  |  |  |  |  |
| 13 | 13 | FEC | manual | 1d | 2021-03-31 | 2021-03-31 |  |  |  | 2021-03-31 | 2021-03-31 | 1d |  |  |  |  |  |  |
| 14 | 14 | TT | manual | 1d | 2021-03-31 | 2021-03-31 |  |  |  | 2021-03-31 | 2021-03-31 | 1d |  |  |  |  |  |  |
| 15 | 15 | PP | manual | 1d | 2021-03-31 | 2021-03-31 |  |  |  | 2021-03-31 | 2021-03-31 | 1d |  |  |  |  |  |  |
| 16 | 16 | MP1 | manual | 1d | 2021-03-31 | 2021-03-31 |  |  |  | 2021-03-31 | 2021-03-31 | 1d |  |  |  |  |  |  |
| 17 | 17 | OKTB of U625ICA2 | manual | 1d | 2021-03-31 | 2021-03-31 |  |  |  | 2021-03-31 | 2021-03-31 | 1d |  |  |  |  |  |  |
| 18 | 18 | **SYNC+ 3.0(U6xx)** |  | 308d? | 2023-03-01 A | 2024-05-22 |  | 72% | 86.47d? | 2023-03-01 | 2024-05-22 | 308d? | 0d |  |  | 14056h | 8703.87h |  |
| 19 | 18.1 | PO planned to be approved by 2023-3-28 (12 weeks-8 weeks resource limitation dependency for 707) |  | 1d? | 2023-04-13 A | 2023-04-13 A |  | 100% |  | 2023-04-13 | 2023-04-13 | 1d? |  | start no earlier than 2023-04-13 |  |  |  |  |
| 20 | 18.2 | UE Review and release |  | 15d | 2023-04-18 A | 2023-05-05 A |  | 100% |  | 2023-04-18 | 2023-05-05 | 15d |  | start no earlier than 2023-04-18 | ford | 120h | 120h | ford UE释放 |
| 21 | 18.3 | UI review and release |  | 15d | 2023-04-18 A | 2023-05-05 A |  | 100% |  | 2023-04-18 | 2023-05-05 | 15d |  | start no earlier than 2023-04-18 | ford | 120h | 120h | ford UI释放 |
| 22 | 18.4 | UI UE sign off | manual | 8d | 2023-05-06 A | 2023-05-16 A | 21 | 100% |  | 2023-05-06 | 2023-05-18 | 10d |  |  |  |  |  |  |
| 23 | 18.5 | HW available - with MFI for U611MCA | manual | 24d | 2023-04-14 A | 2023-05-15 A | 19 | 100% |  | 2023-04-14 | 2023-05-23 | 30d |  |  |  |  |  |  |
| 24 | 18.6 | HW available with MFI for U625ICA2 | manual | 24d | 2023-04-14 A | 2023-05-15 A |  | 100% |  | 2023-04-14 | 2023-05-23 | 30d |  |  |  |  |  |  |
| 25 | 18.7 | U625MCA 对手件 available | manual | 1d | 2023-06-15 A | 2023-06-15 A |  | 100% |  | 2023-06-15 | 2023-06-15 | 1d |  |  | ford | 8h | 8h |  |
| 26 | 18.8 | Benches available * 4 U625MCA |  | 40d | 2023-06-16 A | 2023-08-10 A | 23, 25 | 100% |  | 2023-06-16 | 2023-08-10 | 40d |  |  | YF | 320h | 320h |  |
| 27 | 18.9 | Vehicle available * 2 U625MCA | manual | 10d | 2023-08-10 | 2023-08-23 |  |  |  | 2023-08-10 | 2023-08-23 | 10d |  |  | ford | 80h |  | PMO确认有车 |
| 28 | 18.10 | U625MCA蓝牙和语音调参 | manual | 1d | 2023-11-30 | 2023-11-30 |  |  |  | 2023-11-30 | 2023-11-30 | 1d |  |  | ford | 8h |  |  |
| 29 | 18.11 | U611MCA 蓝牙和语音调参 | manual | 1d | 2023-09-15 | 2023-09-15 |  |  |  | 2023-09-15 | 2023-09-15 | 1d |  |  | ford | 8h |  |  |

Notes:
- 24: 百度 TS 采购提需求到YF?

| ID | WBS | Task | Type | Duration | Start | Finish | Predecessors | Complete | Remaining | Actual start | Actual finish | Baseline start | Baseline finish | Baseline duration | Total slack | Constraint | Resources | Work | Actual work | 依赖项 |
| --- | --- | --- | --- | --- | --- | --- | --- | --- | --- | --- | --- | --- | --- | --- | --- | --- | --- | --- | --- | --- |
| 30 | 18.12 | **SW development** |  | 212d? | 2023-03-01 A | 2023-12-26 |  | 91% | 18.64d? |  |  | 2023-03-01 | 2023-11-15 | 183d? | 96d |  |  | 10104h | 6953.87h |  |
| 31 | 18.12.1 | Customer requirement spec review and release |  | 15d | 2023-04-14 A | 2023-05-03 A | 19 | 100% |  |  |  | 2023-04-14 | 2023-05-03 | 15d |  |  | YF | 120h | 120h |  |
| 32 | 18.12.2 | Software requirement spec review and release |  | 19d | 2023-05-04 A | 2023-05-29 A | 31 | 100% |  |  |  | 2023-05-04 | 2023-05-30 | 20d |  |  | YF | 152h | 152h | ford MRD签署 |
| 33 | 18.12.3 | Test case creation |  | 20d | 2023-05-31 A | 2023-06-27 A | 32 | 100% |  |  |  | 2023-05-31 | 2023-06-27 | 20d |  |  | YF | 160h | 160h | MRD释放 |
| 34 | 18.12.4 | Test case review and release |  | 5d | 2023-06-28 A | 2023-07-04 A | 33 | 100% |  |  |  | 2023-06-28 | 2023-07-04 | 5d |  |  | YF | 40h | 40h | 测试用例输出 |
| 35 | 18.12.5 | Carplay UIUE Apple audit | manual | 1d | 2023-07-14 A | 2023-07-14 A |  | 100% |  |  |  |  |  |  |  |  |  |  |  |  |
| 36 | 18.12.6 | TARA review | inactive, manual | 5d | 2023-06-06 | 2023-06-12 | 32 |  |  |  |  | 2023-06-06 | 2023-06-12 | 5d |  |  | YF | 40h |  | MRD签署 |
| 37 | 18.12.7 | **30% Basic function migration from CX707** |  | 212d? | 2023-03-01 A | 2023-12-26 | 23 | 91% | 20d? |  |  | 2023-03-01 | 2023-11-15 | 183d? | 96d |  | YF | 9632h | 6481.87h | 基础硬件功能调试完成 |
| 38 | 18.12.7.1 | 707 BASE FUNCTION COMPLETE | manual | 1d | 2023-06-28 A | 2023-06-28 A |  | 100% |  |  |  | 2023-06-28 | 2023-06-28 | 1d |  |  |  |  |  | U6 基于707 功能开发基本完成后开始移植和适配 |
| 39 | 18.12.7.2 | bonjour框架移植适配 | manual | 2d | 2023-07-31 A | 2023-08-01 A |  | 100% |  |  |  | 2023-06-29 | 2023-06-30 | 2d |  |  | YF | 16h | 16h |  |
| 40 | 18.12.7.3 | CarPlayResourceManger框架开发 | manual | 1d | 2023-07-31 A | 2023-07-31 A |  | 100% |  |  |  | 2023-07-03 | 2023-07-03 | 1d |  |  | YF | 8h | 8h |  |
| 41 | 18.12.7.4 | CarPlayApp框架开发 | manual | 5d | 2023-07-31 A | 2023-08-04 A |  | 100% |  |  |  | 2023-07-05 | 2023-07-11 | 5d |  |  | YF | 40h | 40h |  |
| 42 | 18.12.7.5 | 苹果MFI芯片适配: Hal层到framework层的调试 | manual | 5d | 2023-07-31 A | 2023-08-04 A |  | 100% |  |  |  | 2023-07-12 | 2023-07-18 | 5d |  |  | YF | 40h | 40h |  |
| 43 | 18.12.7.6 | **80% function development** |  | 149d? | 2023-03-01 A | 2023-09-21 |  | 99% | 0d? |  |  | 2023-03-01 | 2023-09-21 | 149d? | 0d |  | YF | 5280h | 4681.19h |  |
| 44 | 18.12.7.6.1 | 协议栈iap2框架开发 | manual | 3d | 2023-07-31 A | 2023-08-02 A | 42 | 100% |  |  |  | 2023-07-19 | 2023-07-21 | 3d |  |  | YF | 24h | 24h |  |
| 45 | 18.12.7.6.2 | 协议栈plugin框架开发 | manual | 3d | 2023-07-31 A | 2023-08-02 A |  | 100% |  |  |  | 2023-07-24 | 2023-07-26 | 3d |  |  | YF | 24h | 24h |  |
| 46 | 18.12.7.6.3 | carplay主视频流适配 | manual | 10d | 2023-07-31 A | 2023-08-11 A |  | 100% |  |  |  | 2023-07-31 | 2023-08-04 | 5d |  |  | YF | 80h | 80h |  |
| 47 | 18.12.7.6.4 | **Carplay界面设计/交互设计** |  | 30d | 2023-07-11 | 2023-08-21 |  | 100% |  | 2023-08-07 | 2023-09-01 | 2023-07-11 | 2023-08-21 | 30d |  |  |  | 1280h | 1280h | UE资源输出 |
| 48 | 18.12.7.6.4.1 | carplay弹窗遮盖第三方交互业务 |  | 20d | 2023-08-07 A | 2023-09-01 A |  | 100% |  |  |  | 2023-07-11 | 2023-08-21 | 30d |  | start no earlier than 2023-08-07 | YF | 160h | 160h |  |
| 49 | 18.12.7.6.4.2 | carplay音乐随心听，后排显示 |  | 20d | 2023-08-07 A | 2023-09-01 A | 20 | 100% |  |  |  | 2023-07-11 | 2023-08-21 | 30d |  | finish no earlier than 2023-09-01 | YF | 160h | 160h |  |
| 50 | 18.12.7.6.4.3 | cafplay连接业务 |  | 20d | 2023-08-07 A | 2023-09-01 A | 20 | 100% |  |  |  | 2023-07-11 | 2023-08-21 | 30d |  | finish no earlier than 2023-09-01 | YF | 160h | 160h |  |
| 51 | 18.12.7.6.4.4 | carplay重连业务 |  | 20d | 2023-08-07 A | 2023-09-01 A | 20 | 100% |  |  |  | 2023-07-11 | 2023-08-21 | 30d |  | finish no earlier than 2023-09-01 | YF | 160h | 160h |  |
| 52 | 18.12.7.6.4.5 | carplay电话仪表显示业务 |  | 20d | 2023-08-07 A | 2023-09-01 A | 20 | 100% |  |  |  | 2023-07-11 | 2023-08-21 | 30d |  | finish no earlier than 2023-09-01 | YF | 160h | 160h |  |
| 53 | 18.12.7.6.4.6 | carplay接口业务提供 |  | 20d | 2023-08-07 A | 2023-09-01 A | 20 | 100% |  |  |  | 2023-07-11 | 2023-08-21 | 30d |  | finish no earlier than 2023-09-01 | YF | 160h | 160h |  |
| 54 | 18.12.7.6.4.7 | carplay方控按键需求 |  | 20d | 2023-08-07 A | 2023-09-01 A | 20 | 100% |  |  |  | 2023-07-11 | 2023-08-21 | 30d |  | finish no earlier than 2023-09-01 | YF | 160h | 160h |  |
| 55 | 18.12.7.6.4.8 | carplay兼容13以下手机 |  | 20d | 2023-08-07 A | 2023-09-01 A | 20 | 100% |  |  |  | 2023-07-11 | 2023-08-21 | 30d |  | finish no earlier than 2023-09-01 | YF | 160h | 160h |  |

| ID | WBS | Task | Type | Duration | Start | Finish | Predecessors | Complete | Remaining | Actual start | Baseline start | Baseline finish | Baseline duration | Total slack | Constraint | Resources | Work | Actual work |
| --- | --- | --- | --- | --- | --- | --- | --- | --- | --- | --- | --- | --- | --- | --- | --- | --- | --- | --- |
| 56 | 18.12.7.6.5 | **AudioManager & Audioflinger** |  | 89d? | 2023-05-22 A | 2023-09-21 |  | 99% | 0d? |  | 2023-05-22 | 2023-09-21 | 89d | 0d |  | YF | 1392h | 1152h |
| 57 | 18.12.7.6.5.1 | 提供carplay所有接口文档 | manual | 10d | 2023-05-22 A | 2023-06-02 A | 22 | 100% |  |  | 2023-05-22 | 2023-06-02 | 10d |  |  | YF | 80h | 80h |
| 58 | 18.12.7.6.5.2 | 延锋提供软件demo版本 | manual | 1d | 2023-07-26 A | 2023-07-26 A | 38FS+10d | 100% |  |  | 2023-07-13 | 2023-07-18 | 4d |  |  | YF | 8h | 8h |
| 59 | 18.12.7.6.5.3 | audio arbitration management update |  | 11d | 2023-07-27 A | 2023-08-10 A | 58 | 100% |  |  | 2023-07-19 | 2023-08-02 | 11d |  |  | Inhouse | 88h | 88h |
| 60 | 18.12.7.6.5.4 | Audio data control update |  | 30d | 2023-08-11 A | 2023-09-21 A | 59 | 100% |  |  | 2023-08-03 | 2023-09-13 | 30d |  |  | Inhouse | 240h | 240h |
| 61 | 18.12.7.6.5.5 | Audio对接 | manual | 3d | 2023-09-19 A | 2023-09-21 A | 60 | 100% |  |  | 2023-09-19 | 2023-09-21 | 3d |  |  | YF | 24h | 24h |
| 62 | 18.12.7.6.5.6 | carplay音频流适配焦点适配 | manual | 30d | 2023-07-24 A | 2023-09-01 A | 58 | 100% |  |  | 2023-07-24 | 2023-09-11 | 36d |  |  |  |  |  |
| 63 | 18.12.7.6.5.7 | aduio对接 创达 开发+联调 | manual | 30d | 2023-07-24 A | 2023-09-01 A | 58 | 100% |  |  | 2023-07-24 | 2023-09-11 | 36d |  |  |  |  |  |
| 64 | 18.12.7.6.5.8 | aduio对接 百度 开发+联调 (需要百度完成开发工作语音指令) | manual | 30d | 2023-07-24 A | 2023-09-01 A | 58 | 100% |  |  | 2023-07-24 | 2023-09-11 | 36d |  |  |  |  |  |
| 65 | 18.12.7.6.5.9 | **multi-screen, interaction with cluster** |  | 30d? | 2023-06-20 | 2023-07-31 |  | 99% | 0d? | 2023-08-14 | 2023-06-20 | 2023-07-31 | 30d |  |  | YF | 240h |  |
| 66 | 18.12.7.6.5.9.1 | media 仪表同步多媒体信息 |  | 12d | 2023-08-14 A | 2023-08-29 A |  | 100% |  |  |  |  |  |  | finish no earlier than 2023-08-30 |  |  |  |
| 67 | 18.12.7.6.5.9.2 | **多屏互动 电话显示** |  | 13d | 2023-08-14 A | 2023-08-30 A |  | 100% |  |  |  |  |  |  |  |  |  |  |
| 68 | 18.12.7.6.5.9.2.1 | 接口调用逻辑编码 |  | 7d | 2023-08-14 A | 2023-08-22 A |  | 100% |  |  |  |  |  |  | start no earlier than 2023-08-14 |  |  |  |
| 69 | 18.12.7.6.5.9.2.2 | 功能自测bug修复 | manual | 6d | 2023-08-23 A | 2023-08-30 A | 68 | 100% |  |  |  |  |  |  |  |  |  |  |
| 70 | 18.12.7.6.5.9.3 | **Carplay导航** |  | 9d | 2023-08-16 A | 2023-08-28 A |  | 100% |  |  |  |  |  |  |  |  |  |  |
| 71 | 18.12.7.6.5.9.3.1 | 接口调用逻辑编码 | manual | 6d | 2023-08-16 A | 2023-08-23 A |  | 100% |  |  |  |  |  |  |  |  |  |  |
| 72 | 18.12.7.6.5.9.3.2 | bug修复 | manual | 3d | 2023-08-24 A | 2023-08-28 A | 71 | 100% |  |  |  |  |  |  |  |  |  |  |
| 73 | 18.12.7.6.6 | **Enhenced Siri** |  | 68d | 2023-06-02 A | 2023-09-05 |  | 99% | 0d |  | 2023-06-02 | 2023-08-29 | 63d? | 0d |  | baidu | 816h | 457.19h |
| 74 | 18.12.7.6.6.1 | enhanced Siri MRD release | manual | 10d | 2023-06-02 A | 2023-06-15 A |  | 100% |  |  | 2023-06-02 | 2023-06-15 | 10d |  |  | baidu | 80h | 80h |
| 75 | 18.12.7.6.6.2 | carplay SDK interface list review and release | manual | 5d | 2023-07-31 A | 2023-08-04 A | 74 | 100% |  |  | 2023-06-19 | 2023-06-23 | 5d |  | start no earlier than 2023-07-31 | YF | 40h | 40h |
| 76 | 18.12.7.6.6.3 | integrate sdk and modeling | manual | 7d | 2023-08-07 A | 2023-08-15 A | 75 | 100% |  |  | 2023-06-26 | 2023-07-04 | 7d |  | start no earlier than 2023-08-07 | baidu | 56h | 56h |
| 77 | 18.12.7.6.6.4 | 语音技术部降噪后音频转发链路联调 | manual | 35d | 2023-07-05 A | 2023-08-22 A |  | 100% |  |  | 2023-07-05 | 2023-07-24 | 14d? |  |  |  |  |  |
| 78 | 18.12.7.6.6.5 | SDK接口适配 | manual | 10d | 2023-07-25 A | 2023-08-07 A | 77 | 100% |  |  | 2023-07-25 | 2023-08-07 | 10d? |  |  |  |  |  |
| 79 | 18.12.7.6.6.6 | 延锋的硬按键交互 | manual | 1d | 2023-08-08 A | 2023-08-08 A | 78 | 100% |  |  | 2023-08-08 | 2023-08-08 | 1d? |  |  |  |  |  |
| 80 | 18.12.7.6.6.7 | 与系统功能联调 | manual | 10d | 2023-08-23 A | 2023-09-05 A | 79 | 100% |  |  | 2023-08-09 | 2023-08-22 | 10d? |  |  |  |  |  |
| 81 | 18.12.7.6.6.8 | bugfix | manual | 10d | 2023-08-23 A | 2023-09-05 A |  | 100% |  |  | 2023-08-23 | 2023-08-29 | 5d? |  |  |  |  |  |
| 82 | 18.12.7.6.6.9 | 随心听UI/UE开发 | manual | 10d | 2023-07-05 A | 2023-07-18 A | 76 | 100% |  |  | 2023-07-05 | 2023-07-18 | 10d? |  |  |  |  |  |
| 83 | 18.12.7.6.6.10 | 联调 | manual | 9d | 2023-08-22 A | 2023-09-01 A | 79, 82 | 100% |  |  | 2023-08-09 | 2023-08-22 | 10d? |  |  |  |  |  |
| 84 | 18.12.7.6.6.11 | bugfix | manual | 8d | 2023-08-23 A | 2023-09-01 A | 83 | 100% |  |  | 2023-08-23 | 2023-08-29 | 5d? |  |  |  |  |  |
| 85 | 18.12.7.6.6.12 | 地图功能开发适配 | manual | 10d | 2023-07-05 A | 2023-07-18 A | 76 | 100% |  |  | 2023-07-05 | 2023-07-18 | 10d? |  |  |  |  |  |
| 86 | 18.12.7.6.6.13 | 联调 | manual | 18d | 2023-08-09 A | 2023-09-01 A | 85, 79 | 100% |  |  | 2023-08-09 | 2023-08-22 | 10d? |  |  |  |  |  |
| 87 | 18.12.7.6.6.14 | bugfix | manual | 8d | 2023-08-23 A | 2023-09-01 A | 86 | 100% |  |  | 2023-08-23 | 2023-08-29 | 5d? |  |  |  |  |  |
| 88 | 18.12.7.6.6.15 | local navigation & Carplay navigation arbitration | manual | 10d | 2023-06-20 A | 2023-07-03 A |  | 100% |  |  | 2023-06-20 | 2023-07-03 | 10d |  |  | YF | 80h | 80h |
| 89 | 18.12.7.6.6.16 | enhancesiri适配，互斥交互业务 | manual | 2d | 2023-07-04 A | 2023-07-05 A | 88 | 100% |  |  | 2023-07-04 | 2023-07-05 | 2d |  |  | YF | 16h | 16h |

Notes:
- 56: 依赖项: iAuto & inHouse ,时间为预估
- 57: Follow 707
- 59: 依赖项: 音源仲裁管理
- 60: 依赖项: 音频数据流控制
- 73: 依赖项: 延峰确认只对百度语音模块有需求，对导航模块没有需求；百度侧需要支持carplay的车机，需要到位依赖延峰提供carplay sdk和接口文档
- 74: 依赖项: 假设的开始日期
- 76: 依赖项: U625,8.30完成
- 77: 依赖项: U625.8.30 完成
- 78: 依赖项: U625.8.30 完成

| ID | WBS | Task | Type | Duration | Start | Finish | Predecessors | Complete | Remaining | Baseline start | Baseline finish | Baseline duration | Total slack | Free slack | Constraint | Resources | Work | Actual work | 依赖项 |
| --- | --- | --- | --- | --- | --- | --- | --- | --- | --- | --- | --- | --- | --- | --- | --- | --- | --- | --- | --- |
| 90 | 18.12.7.6.7 | **Location** |  | 59d | 2023-03-01 A | 2023-05-18 A |  | 100% |  | 2023-03-01 | 2023-05-18 | 59d |  |  |  |  | 472h | 472h |  |
| 91 | 18.12.7.6.7.1 | 提供Location的提供接口和说明文档 | manual | 38d | 2023-03-01 A | 2023-04-21 A |  | 100% |  | 2023-03-01 | 2023-04-21 | 38d |  |  |  | TS | 304h | 304h |  |
| 92 | 18.12.7.6.7.2 | 验证接口和说明文档 | manual | 4d | 2023-04-23 A | 2023-04-26 A | 91 | 100% |  | 2023-04-23 | 2023-04-26 | 4d |  |  |  | YF | 32h | 32h |  |
| 93 | 18.12.7.6.7.3 | location nema格式位置上报 | manual | 17d | 2023-04-27 A | 2023-05-18 A | 92 | 100% |  | 2023-04-27 | 2023-05-18 | 17d |  |  |  | YF | 136h | 136h |  |
| 94 | 18.12.7.7 | **ECNR 开发** |  | 123d | 2023-06-30 A | 2023-12-26 |  | 67% | 40.65d | 2023-06-30 | 2023-11-15 | 94d | 96d |  |  | YF | 2552h | 1602.78h |  |
| 95 | 18.12.7.7.1 | U625 Enhance Siri 语料录制 | manual | 19d | 2023-06-30 A | 2023-07-26 A |  | 100% |  | 2023-06-30 | 2023-07-26 | 19d |  |  |  |  |  |  | 实车资源，MFI 主机替换 |
| 96 | 18.12.7.7.2 | U625 语料质检和标注 |  | 5d | 2023-08-21 A | 2023-08-25 A |  | 100% |  | 2023-07-27 | 2023-08-02 | 5d |  |  | start no earlier than 2023-08-21 |  |  |  |  |
| 97 | 18.12.7.7.3 | ECNR for enhanced Siri of U625MCA | manual | 82d | 2023-08-28 A | 2023-12-26 | 96 | 50% | 41d | 2023-08-03 | 2023-09-20 | 35d |  |  |  | baidu | 656h | 328h |  |
| 98 | 18.12.7.7.4 | ECNR calibration for Siri and BT, face time… for U625MCA | manual | 10d | 2023-08-30 A | 2023-09-12 A | 27 | 100% |  | 2023-08-30 | 2023-09-12 | 10d |  |  |  | YF | 80h | 80h |  |
| 99 | 18.12.7.7.5 | performance tuning | manual | 20d | 2023-08-30 A | 2023-09-26 A | 27 | 100% |  | 2023-08-30 | 2023-09-26 | 20d |  |  |  | YF | 160h | 160h |  |
| 100 | 18.12.7.7.6 | U611 Enhance Siri 语料录制 | manual | 8d | 2023-07-26 A | 2023-08-04 A |  | 100% |  | 2023-07-26 | 2023-08-21 | 19d |  |  |  |  |  |  | 实车资源，MFI 主机替换 |
| 101 | 18.12.7.7.7 | U611 语料质检和标注 | manual | 8d | 2023-08-07 A | 2023-08-16 A | 100 | 100% |  | 2023-08-22 | 2023-08-28 | 5d |  |  |  |  |  |  |  |
| 102 | 18.12.7.7.8 | ECNR for enahnced Siri of U611MCA |  | 74d | 2023-08-16 A | 2023-12-04 |  | 50% | 37d | 2023-09-25 | 2023-11-15 | 33d | 112d |  | start no earlier than 2023-08-16 | baidu | 592h | 296h |  |
| 103 | 18.12.7.7.9 | ECNR calibration for Siri and BT, face time… for U611MCA |  | 10d | 2023-09-13 A | 2023-09-26 A | 98 | 100% |  | 2023-09-13 | 2023-09-26 | 10d |  |  |  | YF | 80h | 80h |  |
| 104 | 18.13 | **CarPlay certification** |  | 264d | 2023-03-28 A | 2024-04-16 |  | 32% | 179.56d | 2023-03-28 | 2024-04-16 | 264d | 25d |  |  |  | 3288h | 1182h |  |
| 105 | 18.13.1 | Prepare and submit product plan | manual | 4d | 2023-03-28 A | 2023-03-31 A |  | 100% |  | 2023-03-28 | 2023-03-31 | 4d |  |  | start no earlier than 2023-03-28 | YF | 32h | 32h | 产品配置文档 |
| 106 | 18.13.2 | Prepare and Submit CarPlay Configuration record | manual | 5d | 2023-04-03 A | 2023-04-07 A | 105 | 100% |  | 2023-04-03 | 2023-04-07 | 5d |  |  | start no earlier than 2023-04-03 | YF | 40h | 40h | 产品配置文档（Product Plan has been approved on MFI protal) |
| 107 | 18.13.3 | Apple audit product & configuration files | manual | 11d | 2023-04-10 A | 2023-04-23 A | 106 | 100% |  | 2023-04-10 | 2023-04-23 | 11d |  |  | start no earlier than 2023-04-10 | Apple; YF | 176h | 176h | 苹果提交资料 |
| 108 | 18.13.4 | Refine carplay audit files |  | 10d | 2023-04-24 A | 2023-05-05 A | 107 | 100% |  | 2023-04-24 | 2023-05-05 | 10d |  |  |  | YF | 80h | 80h | 修改后的配置文档 |
| 109 | 18.13.5 | App re-audit product & configuration file |  | 20d | 2023-05-06 A | 2023-06-01 A | 108 | 100% |  | 2023-05-06 | 2023-06-01 | 20d |  |  |  | Apple | 160h | 160h | 修改后的苹果提交资料 |
| 110 | 18.13.6 | Prepare and Submit Intergration design- User Experience review |  | 20d | 2023-06-02 A | 2023-06-29 A | 109 | 100% |  | 2023-06-02 | 2023-06-29 | 20d |  |  | finish no earlier than 2021-12-31 | Apple; YF | 320h | 320h | UE设计文档 |
| 111 | 18.13.7 | Submit Integration design/Graphics review |  | 20d | 2023-09-11 | 2023-10-13 |  |  |  | 2023-11-20 | 2023-12-15 | 20d | 148d |  | start no earlier than 2023-09-11 | Apple; YF | 320h |  | user interface graphics, text is finalized |
| 112 | 18.13.8 | **Carplay bench test (2 pre-test + 2 test) FACETS** |  | 102d | 2023-10-25 A | 2024-03-27 |  | 3% | 99.06d | 2023-09-11 | 2024-03-19 | 123d | 39d |  |  |  | 920h | 30h |  |
| 113 | 18.13.8.1 | 1st round of pre-test |  | 15d | 2023-10-25 A | 2023-11-14 | 140FS+2d | 25% | 11.25d | 2023-09-11 | 2023-09-29 | 15d | 126d | 2d | start no earlier than 2023-09-04 | YF | 120h | 30h |  |
| 114 | 18.13.8.2 | debug |  | 15d | 2023-11-07 | 2023-11-27 | 113SS+7d |  |  | 2023-09-20 | 2023-10-24 | 20d | 70d | 0d | start no earlier than 2023-11-07 | YF | 120h |  |  |
| 115 | 18.13.8.3 | 2nd round of pre-test |  | 15d | 2023-12-01 | 2023-12-21 | 114FS+3d |  |  | 2023-10-30 | 2023-11-17 | 15d | 70d | 0d |  | YF | 120h |  | 硬件配套齐套，软件成熟度100% |
| 116 | 18.13.8.4 | debug |  | 15d | 2023-12-08 | 2023-12-28 | 115SS+5d |  |  | 2023-11-06 | 2023-12-01 | 20d | 91d | 0d |  | YF | 120h |  |  |
| 117 | 18.13.8.5 | software integration and release |  | 3d | 2023-12-29 | 2024-01-05 | 116 |  |  | 2023-12-04 | 2023-12-08 | 5d | 91d |  |  | YF | 24h |  |  |
| 118 | 18.13.8.6 | prepare and submit self-test report |  | 5d | 2023-12-22 | 2023-12-28 | 115 |  |  | 2023-12-11 | 2023-12-15 | 5d | 70d | 0d |  | YF | 40h |  |  |
| 119 | 18.13.8.7 | 苹果审核自测报告 |  | 6d | 2023-12-29 | 2024-01-10 | 118 |  |  | 2023-12-18 | 2023-12-25 | 6d | 70d | 0d |  |  |  |  |  |
| 120 | 18.13.8.8 | 1st round of Test |  | 15d | 2024-01-16 | 2024-02-05 | 119FS+3d |  |  | 2023-12-29 | 2024-01-23 | 15d | 70d | 0d | finish no earlier than 2022-05-25 | YF | 120h |  | 硬件配套齐套，软件预测试通过 |
| 121 | 18.13.8.9 | debug |  | 15d | 2024-01-23 | 2024-02-20 | 120SS+5d |  |  | 2024-01-10 | 2024-01-30 | 15d | 0d |  | finish no earlier than 2022-06-13 | YF | 120h |  |  |
| 122 | 18.13.8.10 | review and release self-test report |  | 5d | 2024-02-21 | 2024-02-27 | 121 |  |  | 2024-01-31 | 2024-02-06 | 5d | 0d |  |  | YF | 40h |  |  |
| 123 | 18.13.8.11 | 苹果审核自测报告 |  | 6d | 2024-02-28 | 2024-03-06 | 122 |  |  | 2024-02-07 | 2024-02-22 | 6d | 0d |  | start no earlier than 2022-07-29 | YF; Apple | 96h |  |  |
| 124 | 18.13.8.12 | 2nd round of Test |  | 15d | 2024-03-07 | 2024-03-27 | 123 |  |  | 2024-02-28 | 2024-03-19 | 15d | 0d |  | start no earlier than 2024-02-28 |  |  |  |  |

Notes:
- 90: Follow 707
- 97: 依赖实车，50个工作日仅能完成初版模型输出，不一定满足认证要求
- 98: 除707之外的其他车型只做实车tuning
- 103: 除707之外的其他车型只做实车tuning
- 113: carplay 全功能
- 118: 包含bug test
- 123: 包含苹果审核时间

| ID | WBS | Task | Type | Duration | Start | Finish | Predecessors | Complete | Remaining | Baseline start | Baseline finish | Baseline duration | Total slack | Free slack | Constraint | Resources | Work | Actual work | 依赖项 |
| --- | --- | --- | --- | --- | --- | --- | --- | --- | --- | --- | --- | --- | --- | --- | --- | --- | --- | --- | --- |
| 125 | 18.13.9 | **ITU-T&Siri&Enhanced Siri** |  | 211d | 2023-04-22 A | 2024-02-28 |  | 38% | 130.71d | 2023-04-22 | 2024-02-28 | 211d | 59d |  |  |  | 1096h | 344h |  |
| 126 | 18.13.9.1 | 客户提供实车至实验室(Siri) | manual | 1d | 2023-12-04 | 2023-12-04 |  |  |  | 2023-12-04 | 2023-12-04 | 1d |  |  |  | ford | 8h |  |  |
| 127 | 18.13.9.2 | SSOW 与供应商 确认 | manual | 20d | 2023-04-22 A | 2023-05-16 A |  | 100% |  | 2023-04-22 | 2023-05-16 | 20d |  |  |  | YF | 160h | 160h |  |
| 128 | 18.13.9.3 | PR release |  | 23d | 2023-05-17 A | 2023-06-16 A | 127 | 100% |  | 2023-05-17 | 2023-05-30 | 10d |  |  | finish no earlier than 2023-06-16 | YF | 184h | 184h |  |
| 129 | 18.13.9.4 | Cerence ITU-T&Siri test | manual | 30d | 2023-12-04 | 2024-01-17 | 107, 27, 97, 98, 28FS+5d |  |  | 2023-12-08 | 2024-01-17 | 26d |  |  | start no earlier than 2023-12-04 | YF | 240h |  |  |
| 130 | 18.13.9.5 | Submit ITU-T |  | 15d | 2024-01-18 | 2024-02-07 | 129 |  |  | 2024-01-18 | 2024-02-07 | 15d | 68d |  |  | YF | 120h |  |  |
| 131 | 18.13.9.6 | U625高中低配ECNR 主观tunning |  | 12d | 2024-01-18 | 2024-02-02 | 129 |  |  | 2024-01-18 | 2024-02-02 | 12d | 59d | 0d |  | YF; ford | 192h |  |  |
| 132 | 18.13.9.7 | U611高中低配ECNR 主观tunning |  | 12d | 2024-02-05 | 2024-02-28 | 131 |  |  | 2024-02-05 | 2024-02-28 | 12d | 59d |  |  | YF; ford | 192h |  |  |
| 133 | 18.13.10 | **Carplay road test and performance test** |  | 18d | 2023-11-13 | 2023-12-06 |  |  |  | 2023-08-24 | 2023-12-27 | 85d | 110d |  |  |  | 144h |  |  |
| 134 | 18.13.10.1 | 1st test |  | 5d | 2023-11-13 | 2023-11-17 | 27, 88 |  |  | 2023-08-24 | 2023-09-06 | 10d | 110d | 0d | start no earlier than 2023-11-13 | YF | 40h |  |  |
| 135 | 18.13.10.2 | debug |  | 5d | 2023-11-20 | 2023-11-24 | 134 |  |  | 2023-09-07 | 2023-09-15 | 7d | 110d | 0d | finish no earlier than 2022-03-11 | YF | 40h |  |  |
| 136 | 18.13.10.3 | 2nd test |  | 5d | 2023-11-27 | 2023-12-01 | 135 |  |  | 2023-09-18 | 2023-09-27 | 8d | 110d | 0d | start no earlier than 2022-03-22 | YF | 40h |  |  |
| 137 | 18.13.10.4 | report |  | 3d | 2023-12-04 | 2023-12-06 | 136 |  |  | 2023-10-16 | 2023-10-27 | 10d | 110d |  | finish no earlier than 2021-12-20 | YF | 24h |  |  |
| 138 | 18.13.11 | 苹果最终认证结果 |  | 14d | 2024-03-28 | 2024-04-16 | 124 |  |  | 2024-03-20 | 2024-04-16 | 20d | 0d |  |  |  |  |  |  |
| 139 | 18.14 | **版本释放** |  | 175d | 2023-08-31 A | 2024-05-22 |  | 6% | 164.06d | 2023-08-31 | 2024-05-22 | 175d | 0d |  |  |  |  |  |  |
| 140 | 18.14.1 | 1st 软件 | manual | 5d | 2023-08-31 A | 2023-09-06 A |  | 100% |  | 2023-08-31 | 2023-09-06 | 5d |  |  |  |  |  |  |  |
| 141 | 18.14.2 | 2nd 软件 | manual | 5d | 2023-10-23 | 2023-10-27 |  |  |  | 2023-10-23 | 2023-10-27 | 5d |  |  |  |  |  |  |  |
| 142 | 18.14.3 | 3rd 软件 | manual | 20d | 2023-11-30 | 2023-12-27 |  |  |  | 2023-11-30 | 2023-12-27 | 20d |  |  |  |  |  |  |  |
| 143 | 18.14.4 | 4th 软件 | manual | 20d | 2024-01-22 | 2024-02-26 |  |  |  | 2024-01-22 | 2024-02-26 | 20d |  |  |  |  |  |  |  |
| 144 | 18.14.5 | 5th 软件 | manual | 5d | 2023-11-27 | 2023-12-01 |  |  |  | 2023-11-27 | 2023-12-01 | 5d |  |  |  |  |  |  |  |
| 145 | 18.14.6 | U611 and U625 carplay SW release |  | 25d | 2024-04-17 | 2024-05-22 | 138 |  |  | 2024-04-17 | 2024-05-22 | 25d | 0d |  |  |  |  |  |  |
| 149 | 19 | 软件自测 | manual | 4d | 2023-08-28 A | 2023-08-31 A |  | 100% |  |  |  |  |  |  |  |  |  |  |  |
| 150 | 20 | DID 配置入口 | manual | 1d | 2023-08-28 A | 2023-08-28 A |  | 100% |  |  |  |  |  |  |  |  |  |  |  |
| 151 | 21 | carplay 同步到 master 分支 | manual | 1d | 2023-09-01 A | 2023-09-01 A |  | 100% |  |  |  |  |  |  |  |  |  |  | YF 一天 |
| 152 | 22 | 集成测试(DISABLE 基本功能测试+carplay 测试) | manual | 10d | 2023-09-04 A | 2023-09-15 A |  | 100% |  |  |  |  |  |  |  |  |  |  |  |
| 154 | 23 | carplay 同步到 master 分支（YF改动点 audio HAL ,BT） | manual | 1d | 2023-09-08 A | 2023-09-08 A |  | 100% |  |  |  |  |  |  |  |  |  |  |  |
| 155 | 24 | carplay 功能测试 | manual | 10d | 2023-09-11 A | 2023-09-22 A |  | 100% |  |  |  |  |  |  |  |  |  |  |  |

Notes:
- 133: 苹果审核后的配置信息表决定是否需要 road test
- 140: 1st bench pre-test
- 141: 2nd bench pre-test
- 142: 1st bench test and function test
- 143: 2nd bench test and function test
- 144: siri ITU-T
